# Polaris DC-1 Baseline

How a schedule from Primavera P6 changed from version to version. A marks actual dates.

## Version 1 (data date 2026-09-24, saved 2025-12-12, file Polaris_DC1_Baseline_CPM.xer)

Note of the change: Add P6 clone design spec and sample XER fixtures

| ID | WBS | Task | Duration | Start | Finish | Predecessors | Total float | Constraint |
| --- | --- | --- | --- | --- | --- | --- | --- | --- |
|  | 0 | **0 Base Date / Award** |  | 2025-12-12 | 2025-12-12 |  |  |  |
| AW-0000 |  | CONTRACT AWARD / BASE DATE (12 Dec 2025) | 0d | 2025-12-12 | 2025-12-12 |  | 32d |  |
|  | 1 | **1 Project Management & Preliminaries** |  | 2026-03-02 | 2027-12-27 |  |  |  |
| MK-000 |  | PROJECT COMMENCEMENT — Commencement Date (2 Mar 2026) | 0d | 2026-03-02 | 2026-03-02 | AW-0000 | -3d | start on 2026-03-02 |
| EX-1000 |  | Instruction to proceed | 0d | 2026-03-03 | 2026-03-03 | MK-000 | 668d |  |
| GW-1000 |  | Instruction to proceed | 0d | 2026-03-03 | 2026-03-03 | MK-000 | 8d |  |
| IL-1000 |  | Instruction to proceed | 0d | 2026-03-03 | 2026-03-03 | MK-000 | 91d |  |
| PM-1000 |  | Project, construction & commercial management, QA/QC (LOE) | 430d | 2026-03-03 | 2027-12-27 | MK-000 | 6d |  |
| VE-1000 |  | Instruction to proceed | 0d | 2026-03-03 | 2026-03-03 | MK-000 | -1d |  |
| EX-1010 |  | Temporary site fencing and gate installation | 10d | 2026-03-04 | 2026-03-17 | GW-1000 | 335d |  |
| GW-1010 |  | Mobilisation, site hoarding and temporary haul road | 15d | 2026-03-04 | 2026-03-24 | GW-1000 | 8d |  |
| GW-1030 |  | Pre-condition survey and blasting permit discharge | 20d | 2026-03-04 | 2026-03-31 | GW-1000 | 560d |  |
| IL-1010 |  | Contract award administration and bonds | 10d | 2026-03-04 | 2026-03-17 | IL-1000 | 91d |  |
| IL-1020 |  | Performance security, guarantees and insurances in place | 10d | 2026-03-04 | 2026-03-17 | IL-1000 | 163d |  |
| VE-1010 |  | Contract award administration, bonds and securities | 10d | 2026-03-04 | 2026-03-17 | VE-1000 | -1d |  |
| VE-1400 |  | Site establishment and electrical setting out | 10d | 2026-03-18 | 2026-03-31 | VE-1010 | 195d |  |
| GW-1020 |  | Site compound base — offices, welfare and parking hardstanding | 12d | 2026-03-25 | 2026-04-13 | GW-1010 | 99d |  |
| GW-1200 |  | Piling — Hall 1 and Hall 2 | 25d | 2026-05-26 | 2026-06-30 | GW-1100 | 8d |  |
| GW-1210 |  | Piling — Hall 3 and Hall 4 | 25d | 2026-06-01 | 2026-07-27 | GW-1030, GW-1200 SS+5d | 541d |  |
| GW-1220 |  | Piling — substation, switchgear and generator compound | 18d | 2026-06-01 | 2026-06-25 | GW-1200 SS+5d | 252d |  |
|  | 2 | **2 Design & Technical Submissions** |  | 2026-03-03 | 2026-07-08 |  |  |  |
| DE-2000 |  | Stage 1 (concept) design submission & Engineer review (14 d) | 14d | 2026-03-03 | 2026-03-20 | MK-000 | 598d |  |
| EL-1000 |  | Instruction to proceed | 0d | 2026-03-03 | 2026-03-03 | MK-000 | 609d |  |
| EL-1010 |  | Design development — BMS/DCIM, fire detection and suppression | 40d | 2026-03-04 | 2026-04-30 | EL-1000 | 609d |  |
| DE-2100 |  | Stage 2 detailed design submission & Engineer review (21 d) | 21d | 2026-03-23 | 2026-04-22 | DE-2000 | 598d |  |
| DE-2200 |  | Stage 3 construction-issue design & Engineer review (14 d) | 14d | 2026-04-23 | 2026-05-13 | DE-2100 | 599d |  |
| AV-1000 |  | Crane aviation-clearance approvals (21 d per crane location) | 21d | 2026-06-09 | 2026-07-08 | ST-1020 | 71d |  |
|  | 3 | **3 Procurement & Long-Lead Manufacture** |  | 2026-01-16 | 2027-02-01 |  |  |  |
| AP-1000 |  | Advance purchase instruction — long-lead electrical plant | 0d | 2026-01-16 | 2026-01-16 | AW-0000 | -2d | start on 2026-01-16 |
| VE-1200 |  | 110/20 kV transformers (2 nr) — order and manufacture | 250d | 2026-01-19 | 2027-01-01 | AP-1000 | -4d |  |
| ST-1000 |  | Instruction to proceed | 0d | 2026-03-03 | 2026-03-03 | MK-000 | 1d |  |
| ST-1010 |  | Design development — steel frame and precast connections | 35d | 2026-03-04 | 2026-04-23 | ST-1000 | 1d |  |
| VE-1100 |  | Design development — HV/MV distribution | 30d | 2026-03-18 | 2026-04-30 | VE-1010 | -1d |  |
| VE-1110 |  | Design development — LV, busway and containment | 25d | 2026-03-18 | 2026-04-23 | VE-1010 | 126d |  |
| VE-1120 |  | Design development — generators, UPS and battery systems | 25d | 2026-03-18 | 2026-04-23 | VE-1010 | 600d |  |
| VE-1240 |  | Standby generators (8 nr) — order and manufacture | 200d | 2026-03-18 | 2026-12-22 | VE-1010 | 19d |  |
| VE-1260 |  | UPS modules (16 nr) — order and manufacture | 150d | 2026-03-18 | 2026-10-13 | VE-1010 | 93d |  |
| VE-1280 |  | Battery systems — order and manufacture | 120d | 2026-03-18 | 2026-09-01 | VE-1010 | 139d |  |
| ST-1020 |  | Fabrication drawings and approval | 30d | 2026-04-24 | 2026-06-08 | ST-1010 | 3d |  |
| ST-1120 |  | Precast wall and floor unit manufacture | 60d | 2026-04-24 | 2026-07-16 | ST-1010 | 532d |  |
| VE-1300 |  | Overhead busway — order and manufacture | 100d | 2026-04-24 | 2026-09-10 | VE-1110 | 124d |  |
| VE-1220 |  | 20 kV ring main switchgear — order and manufacture | 190d | 2026-05-01 | 2027-01-21 | VE-1100 | -1d |  |
| VE-1130 |  | Contractor and Engineer design review | 12d | 2026-05-04 | 2026-05-20 | VE-1100, VE-1110, VE-1120 | 589d |  |
| IL-1200 |  | Chillers — order and manufacture | 130d | 2026-05-19 | 2026-11-16 | IL-1130 | 86d |  |
| IL-1220 |  | Dry coolers / adiabatic units — order and manufacture | 110d | 2026-05-19 | 2026-10-19 | IL-1130 | 90d |  |
| IL-1240 |  | CRAH units (28 nr) — order and manufacture | 110d | 2026-05-19 | 2026-10-19 | IL-1130 | 113d |  |
| IL-1260 |  | Waste-heat recovery plant — order and manufacture | 150d | 2026-05-19 | 2026-12-14 | IL-1130 | 294d |  |
| ST-1100 |  | Structural steel fabrication — Halls 1-2 | 55d | 2026-06-09 | 2026-09-15 | ST-1020 | 1d |  |
| ST-1110 |  | Structural steel fabrication — Halls 3-4 | 55d | 2026-06-09 | 2026-09-15 | ST-1020 | 461d |  |
| VE-1290 |  | Battery systems — delivery to site | 5d | 2026-09-02 | 2026-09-08 | VE-1280 | 139d |  |
| VE-1310 |  | Busway — delivery to site | 7d | 2026-09-11 | 2026-09-21 | VE-1300 | 124d |  |
| VE-1270 |  | UPS — delivery to site | 7d | 2026-10-14 | 2026-10-22 | VE-1260 | 93d |  |
| IL-1230 |  | Dry coolers — delivery to site | 7d | 2026-10-20 | 2026-10-28 | IL-1220 | 90d |  |
| IL-1250 |  | CRAH units — delivery to site | 10d | 2026-10-20 | 2026-11-02 | IL-1240 | 113d |  |
| IL-1210 |  | Chillers — delivery to site | 7d | 2026-11-17 | 2026-11-25 | IL-1200 | 86d |  |
| IL-1270 |  | Waste-heat recovery plant — delivery | 7d | 2026-12-15 | 2026-12-23 | IL-1260 | 294d |  |
| VE-1250 |  | Generators — delivery to site | 10d | 2026-12-23 | 2027-01-05 | VE-1240 | 19d |  |
| VE-1210 |  | Transformers — delivery to site | 10d | 2027-01-04 | 2027-01-15 | VE-1200 | -4d |  |
| VE-1230 |  | Switchgear — delivery to site | 7d | 2027-01-22 | 2027-02-01 | VE-1220 | -1d |  |
|  | 4 | **4 Enabling Works & Earthworks** |  | 2026-03-25 | 2026-10-23 |  |  |  |
| GW-1100 |  | Topsoil strip and bulk earthworks — western two-thirds | 40d | 2026-03-25 | 2026-05-25 | GW-1010 | 8d |  |
| GW-1110 |  | Rock excavation and blasting — eastern third | 55d | 2026-04-01 | 2026-06-23 | GW-1030 | 560d |  |
| GW-1120 |  | Made-ground remediation — north-west corner | 15d | 2026-05-26 | 2026-06-15 | GW-1100 | 330d |  |
| GW-1500 |  | External drainage and below-ground services | 30d | 2026-09-14 | 2026-10-23 | GW-1400, GW-1410 | 423d |  |
|  | 5 | **5 Substructure & Foundations** |  | 2026-04-14 | 2026-10-30 |  |  |  |
| GW-1320 |  | Substructure — shared MEP spine | 25d | 2026-04-14 | 2026-05-20 | GW-1020 | 118d |  |
| ST-1300 |  | Precast erection — shared MEP spine and mezzanine | 30d | 2026-05-21 | 2026-07-02 | GW-1320 | 271d |  |
| GW-1420 |  | Substructure — generator compound and fuel storage bunds | 20d | 2026-06-26 | 2026-08-13 | GW-1220 | 292d |  |
| ST-1310 |  | Precast erection — substation and switchgear building | 18d | 2026-06-26 | 2026-08-11 | GW-1220 | 251d |  |
| GW-1300 |  | Pile caps and ground beams — Halls 1-2 | 15d | 2026-07-01 | 2026-08-11 | GW-1200 | 29d |  |

| ID | WBS | Task | Duration | Start | Finish | Predecessors | Total float |
| --- | --- | --- | --- | --- | --- | --- | --- |
| GW-1310 |  | Pile caps and ground beams — Halls 3-4 | 15d | 2026-07-27 | 2026-08-14 | GW-1300 SS+5d | 500d |
| GW-1400 |  | Ground-bearing slab — Halls 1-2 | 20d | 2026-08-12 | 2026-09-08 | GW-1300 | 8d |
| GW-1410 |  | Ground-bearing slab — Halls 3-4 | 20d | 2026-08-17 | 2026-09-11 | GW-1400 SS+5d | 240d |
| GW-1900 |  | Substructure complete — handover to TP-002 | 0d | 2026-09-14 | 2026-09-14 | GW-1400, GW-1410, GW-1420, GW-1120 | 241d |
| GW-1950 |  | Demobilise bulk earthworks plant | 5d | 2026-10-26 | 2026-10-30 | GW-1500 | 427d |
|  | 6 | **6 Superstructure & Decking** |  | 2026-09-16 | 2027-02-25 |  |  |
| ST-1200 |  | Steel erection — Hall 1 | 22d | 2026-09-16 | 2026-10-15 | GW-1400, ST-1100, AV-1000 | 1d |
| ST-1210 |  | Steel erection — Hall 2 | 22d | 2026-09-28 | 2026-10-27 | ST-1200 SS+10d | 9d |
| ST-1220 |  | Steel erection — Hall 3 | 22d | 2026-09-28 | 2026-10-27 | ST-1200 SS+10d, GW-1410, ST-1110 | 427d |
| ST-1230 |  | Steel erection — Hall 4 | 22d | 2026-10-08 | 2026-11-06 | ST-1210 SS+10d | 417d |
| ST-1400 |  | Metal decking and structural topping — Halls 1-2 | 20d | 2026-10-28 | 2026-11-24 | ST-1200, ST-1210 | 9d |
| ST-1410 |  | Metal decking and structural topping — Halls 3-4 | 20d | 2026-11-02 | 2026-11-27 | ST-1400 SS+5d | 17d |
| ST-1500 |  | Roof steelwork and plant support frames | 25d | 2026-11-30 | 2027-01-07 | ST-1400, ST-1410 | 17d |
| ST-1600 |  | Fire protection to structural steel | 30d | 2027-01-08 | 2027-02-18 | ST-1400, ST-1410, ST-1300, ST-1310, ST-1500 | 83d |
| ST-1900 |  | Structure complete — Halls 1-2 | 0d | 2027-01-08 | 2027-01-08 | ST-1400, ST-1500 | 356d |
| ST-1910 |  | Structure complete — Halls 3-4 | 0d | 2027-01-08 | 2027-01-08 | ST-1410, ST-1500 | 356d |
| ST-1950 |  | Crane demobilisation | 5d | 2027-02-19 | 2027-02-25 | ST-1600 | 307d |
|  | 7 | **7 Envelope** |  | 2026-03-03 | 2027-03-12 |  |  |
| EN-1000 |  | Instruction to proceed | 0d | 2026-03-03 | 2026-03-03 | MK-000 | 140d |
| EN-1010 |  | Design development — cladding, acoustic and fire-rated build-ups | 30d | 2026-03-04 | 2026-04-16 | EN-1000 | 140d |
| EN-1020 |  | Cladding fabrication and delivery to site | 55d | 2026-04-17 | 2026-07-02 | EN-1010 | 138d |
| EN-1100 |  | Roofing — Halls 1-2 | 30d | 2026-10-28 | 2026-12-08 | ST-1400 SS, EN-1020 | 21d |
| EN-1110 |  | Roofing — Halls 3-4 | 30d | 2026-11-02 | 2026-12-11 | ST-1410 SS, EN-1020 | 70d |
| EN-1200 |  | Wall cladding — Halls 1-2 | 30d | 2026-11-02 | 2026-12-11 | EN-1100 SS+5d | 37d |
| EN-1210 |  | Wall cladding — Halls 3-4 | 30d | 2026-11-09 | 2026-12-18 | EN-1110 SS+5d | 79d |
| EN-1500 |  | WEATHERTIGHT — Halls 1-2 | 0d | 2026-12-14 | 2026-12-14 | EN-1200 | 43d |
| EN-1300 |  | Louvres, doors and external openings | 30d | 2026-12-21 | 2027-02-04 | EN-1210 | 302d |
| EN-1510 |  | WEATHERTIGHT — Halls 3-4 | 0d | 2026-12-21 | 2026-12-21 | EN-1210 | 79d |
| EN-1400 |  | Roof plant screens and walkways | 25d | 2027-01-08 | 2027-02-11 | ST-1500 | 291d |
| EN-1600 |  | Envelope snagging and sealant inspection | 20d | 2027-02-12 | 2027-03-11 | EN-1300, EN-1400 | 291d |
| EN-1900 |  | Envelope complete | 0d | 2027-03-12 | 2027-03-12 | EN-1600 | 293d |
|  | 8 | **8 Internal Fit-out & White Space** |  | 2026-03-03 | 2027-06-29 |  |  |
| FI-1000 |  | Instruction to proceed | 0d | 2026-03-03 | 2026-03-03 | MK-000 | 623d |
| FI-1010 |  | Design development — white-space containment and finishes | 30d | 2026-03-04 | 2026-04-16 | FI-1000 | 623d |
| FI-1101 |  | Internal blockwork and partitions — Hall 1 | 15d | 2026-12-15 | 2027-01-08 | EN-1500 | 43d |
| FI-1400 |  | Administration and NOC block fit-out | 40d | 2026-12-15 | 2027-02-12 | EN-1500 | 322d |
| FI-1110 |  | Internal blockwork and partitions — Halls 3-4 | 30d | 2026-12-22 | 2027-02-05 | EN-1510 | 79d |
| FI-1102 |  | Internal blockwork and partitions — Hall 2 | 15d | 2027-01-11 | 2027-01-29 | FI-1101 | 79d |
| FI-1200 |  | Raised access floor — Hall 1 | 20d | 2027-01-11 | 2027-02-05 | FI-1101 | 37d |
| FI-1210 |  | Raised access floor — Hall 2 | 20d | 2027-02-01 | 2027-02-26 | FI-1102 | 79d |
| FI-1220 |  | Raised access floor — Hall 3 | 20d | 2027-02-08 | 2027-03-05 | FI-1110 | 77d |
| FI-1301 |  | Hot/cold aisle containment — Hall 1 | 13d | 2027-02-08 | 2027-02-24 | FI-1200 | 37d |
| FI-1501 |  | Painting, sealing and final finishes — Hall 1 | 10d | 2027-02-25 | 2027-03-10 | FI-1301 | 41d |
| FI-1302 |  | Hot/cold aisle containment — Hall 2 | 13d | 2027-03-01 | 2027-03-17 | FI-1210 | 80d |
| FI-1230 |  | Raised access floor — Hall 4 | 20d | 2027-03-08 | 2027-04-06 | FI-1220 | 78d |
| FI-1601 |  | White-space cleaning (data-centre standard) — Hall 1 | 7d | 2027-03-11 | 2027-03-19 | FI-1501 | 41d |
| FI-1502 |  | Painting, sealing and final finishes — Hall 2 | 10d | 2027-03-18 | 2027-04-02 | FI-1302 | 82d |
| FI-1900 |  | Finishes complete — Section 1 | 0d | 2027-03-22 | 2027-03-22 | FI-1601 | 283d |
| FI-1602 |  | White-space cleaning (data-centre standard) — Hall 2 | 7d | 2027-04-05 | 2027-04-13 | FI-1502 | 78d |
| FI-1310 |  | Hot/cold aisle containment — Halls 3-4 | 25d | 2027-04-07 | 2027-05-12 | FI-1220, FI-1230 | 76d |
| FI-1510 |  | Painting, sealing and final finishes — Halls 3-4 | 20d | 2027-05-13 | 2027-06-09 | FI-1310 | 97d |
| FI-1610 |  | White-space cleaning to data-centre standard — Halls 3-4 | 12d | 2027-06-10 | 2027-06-28 | FI-1510 | 97d |
| FI-1910 |  | Finishes complete — Sections 3-4 | 0d | 2027-06-29 | 2027-06-29 | FI-1610 | 184d |
|  | 9 | **9 Mechanical Services** |  | 2026-03-18 | 2027-10-08 |  |  |
| IL-1100 |  | Design development — chilled water system | 28d | 2026-03-18 | 2026-04-28 | IL-1010 | 91d |
| IL-1110 |  | Design development — heat recovery plant | 24d | 2026-03-18 | 2026-04-22 | IL-1010 | 98d |
| IL-1120 |  | Design development — ventilation and smoke extract | 22d | 2026-03-18 | 2026-04-20 | IL-1010 | 100d |
| IL-1125 |  | Design development — water treatment and adiabatic make-up | 15d | 2026-03-18 | 2026-04-09 | IL-1010 | 111d |
| IL-1300 |  | Site establishment and mechanical setting out | 10d | 2026-03-18 | 2026-03-31 | IL-1000, IL-1020 | 163d |
| IL-1311 |  | Plantroom access — Data Hall 1 | 0d | 2026-04-01 | 2026-04-01 | IL-1300 | 163d |
| IL-1312 |  | Plantroom access — Data Hall 2 | 0d | 2026-04-01 | 2026-04-01 | IL-1300 | 329d |
| IL-1313 |  | Plantroom access — Data Hall 3 | 0d | 2026-04-01 | 2026-04-01 | IL-1300 | 404d |
| IL-1314 |  | Plantroom access — Data Hall 4 | 0d | 2026-04-01 | 2026-04-01 | IL-1300 | 492d |
| IL-1130 |  | Contractor and Engineer design review | 12d | 2026-04-29 | 2026-05-18 | IL-1100, IL-1110, IL-1120, IL-1125 | 90d |
| IL-1400 |  | Chilled water pipework — primary spine | 70d | 2026-05-21 | 2026-09-17 | IL-1311, GW-1320 | 116d |
| IL-1410 |  | Chilled water pipework — Hall 1 secondary | 30d | 2026-06-30 | 2026-08-31 | IL-1400 SS+40d | 143d |
| IL-1500 |  | Pumps, buffer vessels and glycol dosing | 25d | 2026-09-01 | 2026-10-05 | IL-1410 | 128d |
| IL-1420 |  | Chilled water pipework — Hall 2 secondary | 30d | 2026-09-18 | 2026-10-29 | IL-1400, IL-1312 | 160d |
| IL-1430 |  | Chilled water pipework — Hall 3 secondary | 30d | 2026-09-18 | 2026-10-29 | IL-1400, IL-1313 | 235d |
| IL-1440 |  | Chilled water pipework — Hall 4 secondary | 30d | 2026-09-18 | 2026-10-29 | IL-1400, IL-1314 | 325d |

| ID | WBS | Task | Duration | Start | Finish | Predecessors | Total float | Constraint |
| --- | --- | --- | --- | --- | --- | --- | --- | --- |
| IL-1605 |  | CHW system flushing — spine and secondary loops | 12d | 2026-10-06 | 2026-10-21 | IL-1500 | 128d |  |
| IL-1610 |  | Water treatment and adiabatic make-up | 15d | 2026-10-22 | 2026-11-11 | IL-1605 | 130d |  |
| IL-1510 |  | Chiller installation and pipework connection | 20d | 2026-11-26 | 2026-12-23 | IL-1210, IL-1400 | 88d |  |
| IL-1600 |  | Ventilation and smoke extract to ancillary areas | 35d | 2026-12-07 | 2027-01-28 | IL-1510 SS+10d | 329d |  |
| IL-1531 |  | CRAH installation — Hall 1 (7 nr) | 18d | 2026-12-15 | 2027-01-13 | IL-1250, IL-1410, EN-1500 | 71d |  |
| IL-1532 |  | CRAH installation — Hall 2 (7 nr) | 18d | 2026-12-28 | 2027-01-22 | IL-1250, IL-1420, IL-1531 SS+10d | 105d |  |
| IL-1540 |  | Waste-heat recovery plant installation | 30d | 2026-12-28 | 2027-02-09 | IL-1270 | 290d |  |
| IL-1533 |  | CRAH installation — Hall 3 (7 nr) | 18d | 2027-01-07 | 2027-02-01 | IL-1250, IL-1430, IL-1532 SS+10d | 166d |  |
| IL-1520 |  | Dry cooler installation — external roof plant | 60d | 2027-01-08 | 2027-04-05 | IL-1230, ST-1500 | 19d |  |
| IL-1534 |  | CRAH installation — Hall 4 (7 nr) | 18d | 2027-01-18 | 2027-02-10 | IL-1250, IL-1440, IL-1533 SS+10d | 245d |  |
| IL-1550 |  | Waste-heat connection to boundary chamber | 12d | 2027-02-10 | 2027-02-25 | IL-1540 | 288d |  |
| DH-1010 |  | District-heating network available at boundary (offtaker) | 0d | 2027-08-31 | 2027-08-31 | AW-0000 | 104d | start on 2027-08-31 |
| SEA-1000 |  | Heating season open — waste-heat witnessed-test window | 0d | 2027-10-01 | 2027-10-01 | AW-0000 | 73d | start on 2027-10-01 |
| IL-1560 |  | Waste-heat 72-hour witnessed delivery test (4 MW at 70 C) | 5d | 2027-10-04 | 2027-10-08 | IL-1550, DH-1010, SEA-1000 | 71d |  |
|  | 10 | **10 Electrical Services** |  | 2026-04-01 | 2027-06-08 |  |  |  |
| VE-1500 |  | 110 kV termination, metering and protection to DNO interface | 45d | 2026-04-01 | 2026-06-08 | VE-1400 | 219d |  |
| VE-1600 |  | Hall substation 20/0.4 kV — Hall 1 | 25d | 2026-04-01 | 2026-05-08 | VE-1400 | 257d |  |
| VE-1620 |  | Containment and small power — shared MEP spine | 40d | 2026-04-01 | 2026-06-01 | VE-1400 | 195d |  |
| VE-1601 |  | Hall substation 20/0.4 kV — Hall 2 | 25d | 2026-04-16 | 2026-05-22 | VE-1600 SS+15d | 302d |  |
| DNO-1000 |  | 110 kV protection study — submission & DNO approval (20 wd) | 20d | 2026-05-04 | 2026-06-01 | VE-1100 | 276d |  |
| VE-1602 |  | Hall substation 20/0.4 kV — Hall 3 | 25d | 2026-05-04 | 2026-06-08 | VE-1601 SS+15d | 358d |  |
| VE-1603 |  | Hall substation 20/0.4 kV — Hall 4 | 25d | 2026-05-19 | 2026-06-23 | VE-1602 SS+15d | 444d |  |
| VE-1610 |  | Overhead busway and containment — Hall 1 | 30d | 2026-09-22 | 2026-11-02 | VE-1310, VE-1600 | 122d |  |
| VE-1611 |  | Overhead busway and containment — Hall 2 | 30d | 2026-09-22 | 2026-11-02 | VE-1310, VE-1601 | 178d |  |
| VE-1612 |  | Overhead busway and containment — Hall 3 | 30d | 2026-09-22 | 2026-11-02 | VE-1310, VE-1602 | 253d |  |
| VE-1613 |  | Overhead busway and containment — Hall 4 | 30d | 2026-09-22 | 2026-11-02 | VE-1310, VE-1603 | 353d |  |
| VE-1550 |  | UPS and battery system installation | 40d | 2026-10-23 | 2026-12-17 | VE-1270, VE-1290 | 95d |  |
| VE-1530 |  | Standby generator installation (8 nr) and paralleling | 55d | 2027-01-07 | 2027-03-24 | VE-1250 | 18d |  |
| VE-1510 |  | Transformer installation and HV terminations | 35d | 2027-01-18 | 2027-03-05 | VE-1210, VE-1500 | -4d |  |
| VE-1540 |  | Fuel storage, bunding and 48-hour fuel system | 30d | 2027-01-27 | 2027-03-09 | VE-1530 SS+20d | 42d |  |
| VE-1520 |  | 20 kV ring main switchboard installation | 30d | 2027-02-02 | 2027-03-15 | VE-1230 | -1d |  |
| VE-1700 |  | Earthing, bonding, lightning protection and metering | 50d | 2027-03-08 | 2027-05-19 | VE-1510 | 217d |  |
| GRID-1000 |  | 110 kV GRID ENERGISATION (Vantaan Energia) — earliest availability | 0d | 2027-03-12 | 2027-03-12 | VE-1510, DNO-1000 | -8d | start on 2027-03-12 |
| VE-1800 |  | Hall 1 substation energisation and LV distribution live | 15d | 2027-03-12 | 2027-04-05 | VE-1600, VE-1610, VE-1510, GRID-1000 SS | -7d |  |
| VE-1801 |  | Hall 2 substation energisation and LV distribution live | 15d | 2027-04-06 | 2027-04-26 | VE-1601, VE-1611, VE-1800 | 28d |  |
| VE-1802 |  | Hall 3 substation energisation and LV distribution live | 15d | 2027-04-27 | 2027-05-18 | VE-1602, VE-1612, VE-1801 | 100d |  |
| VE-1803 |  | Hall 4 substation energisation and LV distribution live | 15d | 2027-05-19 | 2027-06-08 | VE-1603, VE-1613, VE-1802 | 156d |  |
|  | 11 | **11 ELV, Fire, Security & BMS/DCIM** |  | 2026-11-25 | 2027-05-19 |  |  |  |
| EL-1100 |  | Containment and cable pulling — Halls 1-2 | 30d | 2026-11-25 | 2027-01-11 | ST-1400, VE-1620 | 13d |  |
| EL-1110 |  | Containment and cable pulling — Halls 3-4 | 30d | 2026-12-07 | 2027-01-21 | EL-1100 SS+10d, ST-1410 | 276d |  |
| EL-1200 |  | Fire detection installation — Halls 1-2 | 25d | 2026-12-07 | 2027-01-14 | EL-1100 SS+10d | 29d |  |
| EL-1400 |  | BMS/DCIM head-end and field devices | 40d | 2026-12-07 | 2027-02-04 | EL-1100 SS+10d | 28d |  |
| EL-1300 |  | Gas suppression installation — Halls 1-2 | 25d | 2026-12-17 | 2027-01-26 | EL-1200 SS+10d | 40d |  |
| EL-1210 |  | Fire detection installation — Halls 3-4 | 25d | 2027-01-22 | 2027-02-25 | EL-1110 | 272d |  |
| EL-1500 |  | Security, access control and CCTV — internal | 30d | 2027-01-27 | 2027-03-09 | EL-1300 | 229d |  |
| EL-1600 |  | L3 point-to-point testing — Section 1 | 20d | 2027-02-05 | 2027-03-04 | EL-1200, EL-1300, EL-1400 | 25d |  |
| EL-1310 |  | Gas suppression installation — Halls 3-4 | 25d | 2027-02-26 | 2027-04-05 | EL-1210 | 272d |  |
| EL-1610 |  | L3 point-to-point testing — Sections 2-4 | 25d | 2027-03-05 | 2027-04-12 | EL-1600 | 39d |  |
| EL-1900 |  | ELV complete — Section 1 | 0d | 2027-03-30 | 2027-03-30 | EL-1700 | 23d |  |
| EL-1910 |  | ELV complete — Sections 2-4 | 0d | 2027-05-19 | 2027-05-19 | EL-1710 | 35d |  |
|  | 12 | **12 External Works & Site Infrastructure** |  | 2026-03-18 | 2027-10-07 |  |  |  |
| EX-1100 |  | Fibre entry — route A ducting and chambers | 30d | 2026-03-18 | 2026-04-30 | EX-1010 | 335d |  |
| EX-1110 |  | Fibre entry — route B ducting and chambers | 30d | 2026-05-04 | 2026-06-15 | EX-1100 | 332d |  |
| EX-1200 |  | Permanent site roads and hardstanding — phase 1 | 35d | 2027-02-19 | 2027-04-12 | EX-1110, ST-1600, GW-1900 | 84d |  |
| EX-1300 |  | Perimeter security fence and gates | 30d | 2027-04-13 | 2027-05-25 | EX-1200 | 83d |  |
| EX-1400 |  | External lighting and CCTV columns | 25d | 2027-05-26 | 2027-06-30 | EX-1300 | 103d |  |
| EX-1500 |  | Car parking, footpaths and hardstanding — permanent | 30d | 2027-07-01 | 2027-09-01 | EX-1400 | 102d |  |
| EX-1700 |  | Gatehouse and weighbridge commissioning | 20d | 2027-07-01 | 2027-08-18 | EX-1400, EL-1500 | 116d |  |
| EX-1600 |  | Landscaping and reinstatement | 25d | 2027-09-02 | 2027-10-06 | EX-1500, EX-1700 | 81d |  |
| EX-1900 |  | External works complete | 0d | 2027-10-07 | 2027-10-07 | EX-1600 | 83d |  |
|  | 13 | **13 Commissioning & Sectional Handover** |  | 2027-01-14 | 2027-10-19 |  |  |  |
| IL-1700 |  | Static completion and pressure testing — Section 1 | 8d | 2027-01-14 | 2027-01-25 | IL-1531, IL-1610, IL-1510 | 67d |  |
| IL-1701 |  | Static completion and pressure testing — Section 2 | 10d | 2027-01-25 | 2027-02-05 | IL-1532, IL-1510 | 102d |  |
| IL-1710 |  | Commissioning L4 — Hall 1 | 8d | 2027-01-26 | 2027-02-04 | IL-1700 | 69d |  |
| IL-1702 |  | Static completion and pressure testing — Section 3 | 10d | 2027-02-02 | 2027-02-15 | IL-1533, IL-1510 | 188d |  |
| IL-1711 |  | Commissioning L5 — Hall 1 (witnessed) | 5d | 2027-02-05 | 2027-02-11 | IL-1710 | 69d |  |
| IL-1712 |  | Commissioning L4 — Hall 2 | 15d | 2027-02-08 | 2027-02-26 | IL-1701 | 102d |  |
| IL-1703 |  | Static completion and pressure testing — Section 4 | 10d | 2027-02-11 | 2027-02-24 | IL-1534, IL-1510 | 245d |  |
| IL-1800 |  | SECTIONAL COMPLETION 1 — Data Hall 1 mechanical | 0d | 2027-02-12 | 2027-02-12 | IL-1711 | 69d |  |
| IL-1714 |  | Commissioning L4 — Hall 3 | 15d | 2027-02-16 | 2027-03-08 | IL-1702 | 188d |  |

| ID | WBS | Task | Duration | Start | Finish | Predecessors | Total float |
| --- | --- | --- | --- | --- | --- | --- | --- |
| IL-1716 |  | Commissioning L4 — Hall 4 | 15d | 2027-02-25 | 2027-03-17 | IL-1703 | 245d |
| IL-1713 |  | Commissioning L5 — Hall 2 (witnessed) | 8d | 2027-03-01 | 2027-03-10 | IL-1712 | 102d |
| EL-1700 |  | L4 integrated systems testing support — Section 1 | 15d | 2027-03-05 | 2027-03-25 | EL-1600 | 27d |
| IL-1715 |  | Commissioning L5 — Hall 3 (witnessed) | 8d | 2027-03-09 | 2027-03-18 | IL-1714 | 188d |
| IL-1810 |  | SECTIONAL COMPLETION 2 — Data Hall 2 mechanical | 0d | 2027-03-11 | 2027-03-11 | IL-1713 | 104d |
| LB-1000 |  | Load-bank hire, fuel & commissioning power arrangement | 15d | 2027-03-16 | 2027-04-07 | VE-1520 | -1d |
| IL-1717 |  | Commissioning L5 — Hall 4 (witnessed) | 8d | 2027-03-18 | 2027-03-31 | IL-1716 | 245d |
| IL-1820 |  | SECTIONAL COMPLETION 3 — Data Hall 3 mechanical | 0d | 2027-03-19 | 2027-03-19 | IL-1715 | 188d |
| VE-1900 |  | Commissioning L4 and L5 — Hall 1 (witnessed) | 20d | 2027-03-22 | 2027-04-20 | VE-1800 SS+8d, VE-1550, LB-1000 SS | 1d |
| IL-1720 |  | O&M manuals and as-built records | 12d | 2027-04-01 | 2027-04-16 | IL-1717 | 243d |
| EL-1710 |  | L4 integrated systems testing support — Sections 2-4 | 25d | 2027-04-13 | 2027-05-18 | EL-1610 | 36d |
| IL-1730 |  | Warranties, spare parts and maintenance training handover | 8d | 2027-04-19 | 2027-04-28 | IL-1720 | 242d |
| VE-1950 |  | SECTIONAL COMPLETION 1 — Data Hall 1 electrical | 0d | 2027-04-21 | 2027-04-21 | VE-1900 | 1d |
| MC-C1 |  | Section 1 — integrated L4/L5 witnessing, reliability run & statutory/occupancy inspection | 5d | 2027-04-22 | 2027-04-28 | IL-1800, VE-1950, EL-1900, IL-1510, IL-1520, VE-1520, VE-1530, VE-1540, ST-1300 | 1d |
| VE-1901 |  | Commissioning L4 and L5 — Hall 2 (witnessed) | 20d | 2027-04-27 | 2027-05-25 | VE-1801, VE-1950 | 29d |
| SEC1 |  | SECTIONAL COMPLETION 1 — Data Hall 1 Taking Over | 0d | 2027-04-29 | 2027-04-29 | MC-C1, FI-1601 | 1d |
| VE-1951 |  | SECTIONAL COMPLETION 2 — Data Hall 2 electrical | 0d | 2027-05-26 | 2027-05-26 | VE-1901 | 28d |
| MC-C2 |  | Section 2 — integrated L4/L5 witnessing, reliability run & statutory/occupancy inspection | 5d | 2027-05-27 | 2027-06-02 | IL-1810, VE-1951, EL-1910 | 28d |
| VE-1902 |  | Commissioning L4 and L5 — Hall 3 (witnessed) | 20d | 2027-05-27 | 2027-06-23 | VE-1802, VE-1951 | 91d |
| SEC2 |  | SECTIONAL COMPLETION 2 — Data Hall 2 Taking Over | 0d | 2027-06-03 | 2027-06-03 | MC-C2, FI-1602 | 29d |
| VE-1952 |  | SECTIONAL COMPLETION 3 — Data Hall 3 electrical | 0d | 2027-06-24 | 2027-06-24 | VE-1902 | 91d |
| MC-C3 |  | Section 3 — integrated L4/L5 witnessing, reliability run & statutory/occupancy inspection | 5d | 2027-06-28 | 2027-07-02 | IL-1820, VE-1952, EL-1910 | 88d |
| VE-1903 |  | Commissioning L4 and L5 — Hall 4 (witnessed) | 20d | 2027-06-28 | 2027-08-13 | VE-1803, VE-1952 | 137d |
| SEC3 |  | SECTIONAL COMPLETION 3 — Data Hall 3 Taking Over | 0d | 2027-07-05 | 2027-07-05 | MC-C3, FI-1610 | 88d |
| VE-1953 |  | SECTIONAL COMPLETION 4 — Data Hall 4 electrical | 0d | 2027-08-16 | 2027-08-16 | VE-1903, VE-1540, VE-1700 | 127d |
| VE-1960 |  | O&M manuals, as-builts and warranties | 12d | 2027-08-16 | 2027-08-31 | VE-1903 | 119d |
| VE-1970 |  | Subcontract works complete | 0d | 2027-09-01 | 2027-09-01 | VE-1950, VE-1951, VE-1952, VE-1953, VE-1960 | 120d |
| IL-1830 |  | SECTIONAL COMPLETION 4 — Data Hall 4 mechanical | 0d | 2027-10-11 | 2027-10-11 | IL-1717, IL-1560, IL-1520, IL-1600 | 71d |
| IL-1740 |  | Subcontract works complete | 0d | 2027-10-12 | 2027-10-12 | IL-1800, IL-1810, IL-1820, IL-1830, IL-1730 | 79d |
| MC-C4 |  | Section 4 — integrated L4/L5 witnessing, reliability run & statutory/occupancy inspection (incl. waste-heat demonstratio | 5d | 2027-10-12 | 2027-10-18 | IL-1830, VE-1953, EL-1910 | 71d |
| SEC4 |  | SECTIONAL COMPLETION 4 — Data Hall 4, admin/NOC & external works Taking Over | 0d | 2027-10-19 | 2027-10-19 | MC-C4, EX-1900, FI-1400, IL-1560 | 72d |
|  | 14 | **14 Completion & Handover** |  | 2027-12-27 | 2027-12-27 |  |  |
| PC |  | PROJECT COMPLETION — Time for Completion | 0d | 2027-12-27 | 2027-12-27 | SEC1, SEC2, SEC3, SEC4, GW-1110, GW-1210, GW-1310, GW-1900, ST-1120, ST-1220, ST-1230, ST-1900, ST-1910, ST-1950, EN-1900, FI-1010, FI-1900, FI-1910, IL-1600, IL-1713, IL-1715, IL-1740, VE-1130, VE-1970, EL-1010, EX-1010, EX-1100, EX-1110, PM-1000 FF, DE-2200 FF | 4d |

## Version 2 (data date 2028-06-05, saved 2026-09-24, file PDC1_Baseline_Rev0.xer)

Note of the change: Add P6 clone design spec and sample XER fixtures

Last finish 2027-12-27 → 2028-06-05 (+161d).

Added:

| ID | Task | Duration | Start | Finish | Predecessors | Constraint | Resources |
| --- | --- | --- | --- | --- | --- | --- | --- |
| NB_0001 | Contract award / Notice to Proceed (MS) | 0d | 2026-01-15 | 2026-01-15 |  | start on 2026-01-15 | Site Management |
| NB_0002 | COMMENCEMENT DATE (Cl. 8.1) (MS) | 0d | 2026-03-02 | 2026-03-02 | NB_0001 FS+32d |  | Site Management |
| NB_1000 | Concept design (S1) and design management | 25d | 2026-01-15 | 2026-02-19 | NB_0001 |  | Design Management [150 h] |
| NB_1200 | Site establishment — compound, welfare, security | 20d | 2026-01-15 | 2026-02-12 | NB_0001 |  | Site Management [80 h] |
| NB_1210 | Temporary works — crane bases and hardstands | 15d | 2026-02-12 | 2026-03-05 | NB_1200 |  | Site Management [60 h] |
| NB_1010 | Employer's review — concept design S1 (14 d) | 14d | 2026-02-19 | 2026-03-11 | NB_1000 |  | Design Management [84 h] |
| NB_1020 | Detailed design (S2) and multidiscipline coordination | 60d | 2026-03-11 | 2026-06-09 | NB_1010 |  | Design Management [360 h] |
| NB_1100 | Building permit — application and grant | 55d | 2026-03-11 | 2026-06-02 | NB_1010 |  | Design Management [330 h] |
| NB_1110 | Statutory supervisors approved (MS-04) | 0d | 2026-03-11 | 2026-03-11 | NB_1010 |  | Site Management |
| NB_1030 | Employer's review — detailed design S2 (21 d) | 21d | 2026-06-09 | 2026-07-09 | NB_1020 |  | Design Management [126 h] |
| NB_1040 | Construction-issue design (S3) | 45d | 2026-07-09 | 2026-09-10 | NB_1030 |  | Design Management [270 h] |
| NB_1050 | Employer's review — construction design S3 (14 d) | 14d | 2026-09-10 | 2026-09-30 | NB_1040 |  | Design Management [84 h] |
| NB_7006 | Employer/tenant fit-out access to Hall 1 (MS-10) | 0d | 2027-03-02 | 2027-03-02 |  | start on 2027-03-02 | Site Management |
| NB_7001 | DNO Stage 1 capacity release — 6.5 MVA (external) | 0d | 2027-03-12 | 2027-03-12 |  | start on 2027-03-12 | Site Management |
| NB_7002 | DNO Stage 2 capacity release — 3.5 MVA (external) | 0d | 2027-06-30 | 2027-06-30 |  | start on 2027-06-30 | Site Management |
| NB_7005 | District-heating boundary works complete (Offtaker, external) | 0d | 2027-08-31 | 2027-08-31 |  | start on 2027-08-31 | Site Management |
| NB_7003 | DNO Stage 3 capacity release — 3.0 MVA (external) | 0d | 2027-11-01 | 2027-11-01 |  | start on 2027-10-31 | Site Management |
| NB_7004 | DNO Stage 4 capacity release — 3.0 MVA (external) | 0d | 2028-01-31 | 2028-01-31 |  | start on 2028-01-31 | Site Management |
| NB_2000 | Letting — TP-001 Groundworks & Substructure | 32d | 2026-01-15 | 2026-03-02 | NB_0001 |  | Procurement [96 h] |
| NB_2010 | Letting — TP-002 Structure | 57d | 2026-01-15 | 2026-04-08 | NB_0001 |  | Procurement [171 h] |
| NB_2020 | Letting — TP-003 Building Envelope | 140d | 2026-01-15 | 2026-08-06 | NB_0001 |  | Procurement [420 h] |
| NB_2030 | Letting — TP-004 Fit-out & White Space (brought forward) | 140d | 2026-01-15 | 2026-08-06 | NB_0001 |  | Procurement [420 h] |
| NB_2040 | Letting — TP-005 Mechanical | 62d | 2026-01-15 | 2026-04-15 | NB_0001 |  | Procurement [186 h] |
| NB_2050 | Letting — TP-006 Electrical & Power | 62d | 2026-01-15 | 2026-04-15 | NB_0001 |  | Procurement [186 h] |
| NB_2060 | Letting — TP-007 ELV / BMS-DCIM / Fire (brought forward) | 135d | 2026-01-15 | 2026-07-30 | NB_0001 |  | Procurement [405 h] |
| NB_2070 | Letting — TP-008 External Works & Security | 42d | 2026-01-15 | 2026-03-16 | NB_0001 |  | Procurement [126 h] |
| 7.0 | **Electrical & Power** |  | 2026-01-15 | 2028-04-05 |  |  |  |
| 8.0 | **ELV / BMS-DCIM / Fire** |  | 2026-07-30 | 2027-04-02 |  |  |  |
| 9.0 | **Fit-out & White Space** |  | 2026-08-06 | 2027-02-05 |  |  |  |
| FI_1100 | Internal blockwork and partitions — Halls 1-2 | 30d | 2026-09-17 | 2026-10-29 | FI_1010 |  | Fit-Out Crew [300 h] |
| FI_1300 | Hot/cold aisle containment — Halls 1-2 | 25d | 2026-10-29 | 2026-12-03 | FI_1110 |  | Fit-Out Crew [250 h] |
| FI_1500 | Painting, sealing and final finishes — Halls 1-2 | 20d | 2026-12-03 | 2027-01-05 | FI_1300 |  | Fit-Out Crew [200 h] |
| FI_1600 | White-space cleaning to data-centre standard — Halls 1-2 | 12d | 2027-01-05 | 2027-01-22 | FI_1500 |  | Fit-Out Crew [120 h] |
| 10.0 | **External Works & Security** |  | 2026-03-16 | 2027-01-22 |  |  |  |
| 11.0 | **Commissioning & Handover** |  | 2027-05-24 | 2028-04-24 |  |  |  |
| NB_4000 | Integrated systems testing (L4) — Section 1 | 15d | 2027-05-24 | 2027-06-14 | IL_1800, VE_1950, EL_1900, FI_1900 |  | Commissioning Team [120 h] |
| NB_4001 | Integrated load-bank test (L5, 24 h) — Section 1 | 5d | 2027-06-14 | 2027-06-21 | NB_4000 |  | Commissioning Team [40 h] |
| NB_4002 | Occupancy inspection (käyttöönottotarkastus) — Section 1 | 5d | 2027-06-21 | 2027-06-29 | NB_4001 |  | Commissioning Team [40 h] |
| NB_4003 | TAKING OVER — SECTION 1 (Cl. 10.1) (MS) | 0d | 2027-06-29 | 2027-06-29 | NB_4002 | finish on 2027-05-02 | Site Management |
| NB_4100 | Integrated systems testing (L4) — Section 2 | 15d | 2027-08-18 | 2027-09-08 | IL_1810, VE_1951, EL_1910, FI_1610, NB_4000 SS+10d |  | Commissioning Team [120 h] |
| NB_4101 | Integrated load-bank test (L5, 24 h) — Section 2 | 5d | 2027-09-08 | 2027-09-15 | NB_4100 |  | Commissioning Team [40 h] |
| NB_4102 | Occupancy inspection (käyttöönottotarkastus) — Section 2 | 5d | 2027-09-15 | 2027-09-22 | NB_4101 |  | Commissioning Team [40 h] |
| NB_4103 | TAKING OVER — SECTION 2 (Cl. 10.1) (MS) | 0d | 2027-09-22 | 2027-09-22 | NB_4102 | finish on 2027-07-02 | Site Management |
| NB_4200 | Integrated systems testing (L4) — Section 3 | 15d | 2027-12-21 | 2028-01-13 | IL_1820, VE_1952, EL_1910, FI_1910, NB_4100 SS+10d |  | Commissioning Team [120 h] |
| NB_4201 | Integrated load-bank test (L5, 24 h) — Section 3 | 5d | 2028-01-13 | 2028-01-20 | NB_4200 |  | Commissioning Team [40 h] |
| NB_4202 | Occupancy inspection (käyttöönottotarkastus) — Section 3 | 5d | 2028-01-20 | 2028-01-27 | NB_4201 |  | Commissioning Team [40 h] |
| NB_4203 | TAKING OVER — SECTION 3 (Cl. 10.1) (MS) | 0d | 2028-01-27 | 2028-01-27 | NB_4202 | finish on 2027-10-02 | Site Management |
| NB_4300 | Integrated systems testing (L4) — Section 4 | 15d | 2028-03-20 | 2028-04-10 | IL_1830, VE_1953, EL_1910, FI_1910, NB_4200 SS+10d |  | Commissioning Team [120 h] |
| NB_4301 | Integrated load-bank test (L5, 24 h) — Section 4 | 5d | 2028-04-10 | 2028-04-17 | NB_4300 |  | Commissioning Team [40 h] |
| NB_4302 | Occupancy inspection (käyttöönottotarkastus) — Section 4 | 5d | 2028-04-17 | 2028-04-24 | NB_4301 |  | Commissioning Team [40 h] |
| NB_4303 | TAKING OVER — SECTION 4 (Cl. 10.1) (MS) | 0d | 2028-04-24 | 2028-04-24 | NB_4302 | finish on 2028-01-02 | Site Management |
| NB_5000 | TIME FOR COMPLETION — whole of the Works (Cl. 8.2) (MS) | 0d | 2028-04-24 | 2028-04-24 | NB_4303 | finish on 2028-01-02 | Site Management |
| 12.0 | **Close-out** |  | 2028-04-24 | 2028-06-05 |  |  |  |
| NB_6000 | As-built records, O&M and handover documentation | 30d | 2028-04-24 | 2028-06-05 | NB_5000 |  | Site Management [120 h] |
| NB_6100 | Final account, spares, warranties and close-out (MS) | 0d | 2028-06-05 | 2028-06-05 | NB_6000 |  | Site Management |
| NB_9999 | PROJECT HANDOVER COMPLETE (MS) | 0d | 2028-06-05 | 2028-06-05 | GW_1120, GW_1300, GW_1310, GW_1220, GW_1950, ST_1100, ST_1230, ST_1310, ST_1910, ST_1950, EN_1100, EN_1400, EN_1900, FI_1100, FI_1230, FI_1400, IL_1200, IL_1740, VE_1130, VE_1520, VE_1620, VE_1970, EL_1500, EX_1700, EX_1900, NB_1050, NB_1100, NB_1110, NB_1210, NB_7006, NB_4003, NB_4103, NB_4203, NB_6100 |  | Site Management |

Removed: 0 Base Date / Award; AW-0000 CONTRACT AWARD / BASE DATE (12 Dec 2025); 1 Project Management & Preliminaries; MK-000 PROJECT COMMENCEMENT — Commencement Date (2 Mar 2026); PM-1000 Project, construction & commercial management, QA/QC (LOE); 2 Design & Technical Submissions; DE-2000 Stage 1 (concept) design submission & Engineer review (14 d); DE-2100 Stage 2 detailed design submission & Engineer review (21 d); DE-2200 Stage 3 construction-issue design & Engineer review (14 d); AV-1000 Crane aviation-clearance approvals (21 d per crane location); AP-1000 Advance purchase instruction — long-lead electrical plant; FI-1101 Internal blockwork and partitions — Hall 1; FI-1102 Internal blockwork and partitions — Hall 2; FI-1301 Hot/cold aisle containment — Hall 1; FI-1501 Painting, sealing and final finishes — Hall 1; FI-1302 Hot/cold aisle containment — Hall 2; FI-1601 White-space cleaning (data-centre standard) — Hall 1; FI-1502 Painting, sealing and final finishes — Hall 2; FI-1602 White-space cleaning (data-centre standard) — Hall 2; DH-1010 District-heating network available at boundary (offtaker); SEA-1000 Heating season open — waste-heat witnessed-test window; 10 Electrical Services; DNO-1000 110 kV protection study — submission & DNO approval (20 wd); GRID-1000 110 kV GRID ENERGISATION (Vantaan Energia) — earliest availability; 11 ELV, Fire, Security & BMS/DCIM; 12 External Works & Site Infrastructure; 13 Commissioning & Sectional Handover; LB-1000 Load-bank hire, fuel & commissioning power arrangement; MC-C1 Section 1 — integrated L4/L5 witnessing, reliability run & statutory/occupancy inspection; SEC1 SECTIONAL COMPLETION 1 — Data Hall 1 Taking Over; MC-C2 Section 2 — integrated L4/L5 witnessing, reliability run & statutory/occupancy inspection; SEC2 SECTIONAL COMPLETION 2 — Data Hall 2 Taking Over; MC-C3 Section 3 — integrated L4/L5 witnessing, reliability run & statutory/occupancy inspection; SEC3 SECTIONAL COMPLETION 3 — Data Hall 3 Taking Over; MC-C4 Section 4 — integrated L4/L5 witnessing, reliability run & statutory/occupancy inspection (incl. waste-heat demonstratio; SEC4 SECTIONAL COMPLETION 4 — Data Hall 4, admin/NOC & external works Taking Over; 14 Completion & Handover; PC PROJECT COMPLETION — Time for Completion

Changed:

| ID | Task | Start | Finish | Total float | Predecessors | Other |
| --- | --- | --- | --- | --- | --- | --- |
| 0.0 | **Project Start & Contract** | 2026-01-16 → 2026-01-15 (-1d) | 2027-02-01 → 2026-03-02 (-336d) |  |  | was named 3 Procurement & Long-Lead Manufacture |
| 1.0 | **Project Management, Design & Statutory** | 2026-03-25 → 2026-01-15 (-69d) | 2026-10-23 → 2028-01-31 (+465d) |  |  | was named 4 Enabling Works & Earthworks |
| 2.0 | **Procurement** | 2026-04-14 → 2026-01-15 (-89d) | 2026-10-30 → 2026-08-06 (-85d) |  |  | was named 5 Substructure & Foundations |
| 3.0 | **Civils, Groundworks & Substructure** | 2026-09-16 → 2026-03-02 (-198d) | 2027-02-25 → 2026-09-02 (-176d) |  |  | was named 6 Superstructure & Decking |
| GW_1000 | Instruction to proceed | 2026-03-03 → 2026-03-02 (-1d) | 2026-03-03 → 2026-03-02 (-1d) | 668d → 3d | PROJECT COMMENCEMENT — Commencement Date (2 Mar 2026) → NB_2000 | resources Management & Supervision → Earthworks Crew |
| GW_1010 | Mobilisation, site hoarding and temporary haul road | 2026-03-04 → 2026-03-02 (-2d) | 2026-03-24 → 2026-03-23 (-1d) | 8d → 3d | ST_1000 → GW_1000, NB_0002 | resources Management & Supervision [90 h] → Earthworks Crew [90 h] |
| GW_1030 | Pre-condition survey and blasting permit discharge | 2026-03-04 → 2026-03-02 (-2d) | 2026-03-31 → 2026-03-30 (-1d) | 560d → 459d | ST_1000 → GW_1000 | resources Management & Supervision [120 h] → Surveying Team [60 h] |
| GW_1020 | Site compound base — offices, welfare and parking hardstanding | 2026-03-25 → 2026-03-23 (-2d) | 2026-04-13 → 2026-04-10 (-3d) | 99d → 3d |  | resources Management & Supervision [72 h] → Earthworks Crew [72 h] |
| GW_1100 | Topsoil strip and bulk earthworks — western two-thirds | 2026-03-25 → 2026-03-23 (-2d) | 2026-05-25 → 2026-05-22 (-3d) | 8d → 504d |  | resources Earthworks Crew [640 h] → Earthworks Crew [240 h] |
| GW_1110 | Rock excavation and blasting — eastern third | 2026-04-01 → 2026-03-30 (-2d) | 2026-06-23 → 2026-06-22 (-1d) | 560d → 459d |  | resources Earthworks Crew [880 h] → Earthworks Crew [330 h] |
| GW_1200 | Piling — Hall 1 and Hall 2 | 2026-05-26 → 2026-04-10 (-46d) | 2026-06-30 → 2026-05-19 (-42d) | 8d → 93d | GW_1100 → GW_1020 | resources Management & Supervision [300 h] → Piling Crew [125 h] |
| GW_1320 | Substructure — shared MEP spine | 2026-04-14 → 2026-04-10 (-4d) | 2026-05-20 → 2026-05-19 (-1d) | 118d → 3d |  | resources Substructure Crew [500 h] → Concrete Crew [250 h] |
| GW_1300 | Pile caps and ground beams — Halls 1-2 | 2026-07-01 → 2026-05-19 (-43d) | 2026-08-11 → 2026-06-09 (-63d) | 29d → 507d |  | resources Substructure Crew [180 h] → Concrete Crew [150 h] |
| GW_1400 | Ground-bearing slab — Halls 1-2 | 2026-08-12 → 2026-05-19 (-85d) | 2026-09-08 → 2026-06-16 (-84d) | 8d → 93d | GW_1300 → GW_1200 | resources Substructure Crew [400 h] → Concrete Crew [200 h] |
| GW_1420 | Substructure — generator compound and fuel storage bunds | 2026-06-26 → 2026-05-19 (-38d) | 2026-08-13 → 2026-06-16 (-58d) | 292d → 447d | GW_1220 → GW_1200 | resources Substructure Crew [400 h] → Concrete Crew [200 h] |
| GW_1120 | Made-ground remediation — north-west corner | 2026-05-26 → 2026-05-22 (-4d) | 2026-06-15 → 2026-06-12 (-3d) | 330d → 504d |  | resources Earthworks Crew [240 h] → Earthworks Crew [90 h] |
| GW_1410 | Ground-bearing slab — Halls 3-4 | 2026-08-17 → 2026-06-16 (-62d) | 2026-09-11 → 2026-07-15 (-58d) | 240d → 447d | GW_1400 SS+5d → GW_1420 | resources Substructure Crew [400 h] → Concrete Crew [200 h] |
| GW_1210 | Piling — Hall 3 and Hall 4 | 2026-06-01 → 2026-06-22 (+21d) |  | 541d → 459d | GW_1030, GW_1200 SS+5d → GW_1110 | resources Management & Supervision [300 h] → Piling Crew [125 h] |
| GW_1220 | Piling — substation, switchgear and generator compound | 2026-06-01 → 2026-06-22 (+21d) | 2026-06-25 → 2026-07-16 (+21d) | 252d → 481d | GW_1200 SS+5d → GW_1110 | resources Management & Supervision [216 h] → Piling Crew [90 h] |
| GW_1500 | External drainage and below-ground services | 2026-09-14 → 2026-07-15 (-61d) | 2026-10-23 → 2026-08-26 (-58d) | 423d → 447d | GW_1400, GW_1410 → GW_1900 | resources Earthworks Crew [480 h] → Civil Crew |
| GW_1900 | Substructure complete — handover to TP-002 | 2026-09-14 → 2026-07-15 (-61d) | 2026-09-14 → 2026-07-15 (-61d) | 241d → 447d | GW_1400, GW_1410, GW_1420, GW_1120 → GW_1410 | resources Substructure Crew → Concrete Crew |
| GW_1310 | Pile caps and ground beams — Halls 3-4 |  | 2026-08-14 → 2026-08-17 (+3d) | 500d → 459d | GW_1300 SS+5d → GW_1210 | resources Substructure Crew [180 h] → Concrete Crew [150 h] |
| GW_1950 | Demobilise bulk earthworks plant | 2026-10-26 → 2026-08-26 (-61d) | 2026-10-30 → 2026-09-02 (-58d) | 427d → 447d |  | resources Substructure Crew [100 h] → Site Management [20 h] |
| 4.0 | **Structure** | 2026-03-03 → 2026-04-08 (+36d) | 2027-03-12 → 2026-12-16 (-86d) |  |  | was named 7 Envelope |
| ST_1000 | Instruction to proceed | 2026-03-03 → 2026-04-08 (+36d) | 2026-03-03 → 2026-04-08 (+36d) | 8d → 212d | PROJECT COMMENCEMENT — Commencement Date (2 Mar 2026) → NB_2010 | resources Management & Supervision → Steel & Precast Crew |
| ST_1010 | Design development — steel frame and precast connections | 2026-03-04 → 2026-04-08 (+35d) | 2026-04-23 → 2026-05-29 (+36d) | 1d → 212d | EL_1000 → ST_1000 | resources Procurement [560 h] → Structural Design [140 h] |
| ST_1020 | Fabrication drawings and approval | 2026-04-24 → 2026-05-29 (+35d) | 2026-06-08 → 2026-07-13 (+35d) | 3d → 212d |  | resources Procurement [150 h] → Structural Design |
| ST_1100 | Structural steel fabrication — Halls 1-2 | 2026-06-09 → 2026-05-29 (-11d) | 2026-09-15 → 2026-08-17 (-29d) | 1d → 459d | ST_1020 → ST_1010 | resources Procurement [1100 h] → Vendor (Steel Fabricator) |
| ST_1110 | Structural steel fabrication — Halls 3-4 | 2026-06-09 → 2026-05-29 (-11d) | 2026-09-15 → 2026-08-17 (-29d) | 461d → 419d | ST_1020 → ST_1010 | resources Procurement [1100 h] → Vendor (Steel Fabricator) |
| ST_1120 | Precast wall and floor unit manufacture | 2026-04-24 → 2026-05-29 (+35d) | 2026-07-16 → 2026-08-24 (+39d) | 532d → 410d |  | resources Procurement [960 h] → Vendor (Precast Factory) |
| ST_1200 | Steel erection — Hall 1 | 2026-09-16 → 2026-07-13 (-65d) | 2026-10-15 → 2026-08-12 (-64d) | 1d → 212d | GW_1400, ST_1100, Crane aviation-clearance approvals (21 d per crane location) → ST_1020 | resources Steel & Precast Crew [440 h] → Steel & Precast Crew [176 h] |
| ST_1210 | Steel erection — Hall 2 | 2026-09-28 → 2026-08-12 (-47d) | 2026-10-27 → 2026-09-11 (-46d) | 9d → 422d | ST_1200 SS+10d → ST_1200 | resources Steel & Precast Crew [440 h] → Steel & Precast Crew [176 h] |
| ST_1300 | Precast erection — shared MEP spine and mezzanine | 2026-05-21 → 2026-08-12 (+83d) | 2026-07-02 → 2026-09-23 (+83d) | 271d → 212d | GW_1320 → ST_1200 | resources Substructure Crew [480 h] → Steel & Precast Crew [240 h] |
| ST_1400 | Metal decking and structural topping — Halls 1-2 | 2026-10-28 → 2026-08-17 (-72d) | 2026-11-24 → 2026-09-14 (-71d) | 9d → 419d | ST_1200, ST_1210 → ST_1110 | resources Steel & Precast Crew [240 h] → Steel & Precast Crew [160 h] |
| ST_1220 | Steel erection — Hall 3 | 2026-09-28 → 2026-08-24 (-35d) | 2026-10-27 → 2026-09-23 (-34d) | 427d → 410d | ST_1200 SS+10d, GW_1410, ST_1110 → ST_1120 | resources Steel & Precast Crew [440 h] → Steel & Precast Crew [176 h] |
| ST_1310 | Precast erection — substation and switchgear building | 2026-06-26 → 2026-09-11 (+77d) | 2026-08-11 → 2026-10-07 (+57d) | 251d → 422d | GW_1220 → ST_1210 | resources Substructure Crew [288 h] → Steel & Precast Crew [144 h] |
| ST_1410 | Metal decking and structural topping — Halls 3-4 | 2026-11-02 → 2026-09-14 (-49d) | 2026-11-27 → 2026-10-12 (-46d) | 17d → 419d | ST_1400 SS+5d → ST_1900 | resources Steel & Precast Crew [240 h] → Steel & Precast Crew [160 h] |
| ST_1900 | Structure complete — Halls 1-2 | 2027-01-08 → 2026-09-14 (-116d) | 2027-01-08 → 2026-09-14 (-116d) | 356d → 419d | ST_1400, ST_1500 → ST_1400 |  |
| ST_1230 | Steel erection — Hall 4 | 2026-10-08 → 2026-09-23 (-15d) | 2026-11-06 → 2026-10-23 (-14d) | 417d → 410d | ST_1210 SS+10d → ST_1220 | resources Steel & Precast Crew [440 h] → Steel & Precast Crew [176 h] |
| ST_1500 | Roof steelwork and plant support frames | 2026-11-30 → 2026-09-23 (-68d) | 2027-01-07 → 2026-10-28 (-71d) | 17d → 212d | ST_1400, ST_1410 → ST_1300 | resources Steel & Precast Crew [500 h] → Steel & Precast Crew [200 h] |
| ST_1910 | Structure complete — Halls 3-4 | 2027-01-08 → 2026-10-12 (-88d) | 2027-01-08 → 2026-10-12 (-88d) | 356d → 419d | ST_1410, ST_1500 → ST_1410 |  |
| ST_1600 | Fire protection to structural steel | 2027-01-08 → 2026-10-28 (-72d) | 2027-02-18 → 2026-12-09 (-71d) | 83d → 372d | ST_1400, ST_1410, ST_1300, ST_1310, ST_1500 → ST_1500 | resources Steel & Precast Crew [600 h] → Fire Protection Crew [120 h] |
| ST_1950 | Crane demobilisation | 2027-02-19 → 2026-12-09 (-72d) | 2027-02-25 → 2026-12-16 (-71d) | 307d → 372d |  | resources Steel & Precast Crew [100 h] → Steel & Precast Crew [40 h] |
| 5.0 | **Building Envelope** | 2026-03-03 → 2026-08-06 (+156d) | 2027-06-29 → 2027-02-17 (-132d) |  |  | was named 8 Internal Fit-out & White Space |
| EN_1000 | Instruction to proceed | 2026-03-03 → 2026-08-06 (+156d) | 2026-03-03 → 2026-08-06 (+156d) | 91d → 61d | PROJECT COMMENCEMENT — Commencement Date (2 Mar 2026) → NB_2020 | resources Management & Supervision → Envelope Crew |
| EN_1010 | Design development — cladding, acoustic and fire-rated build-ups | 2026-03-04 → 2026-08-06 (+155d) | 2026-04-16 → 2026-09-17 (+154d) | 140d → 61d | FI_1000 → EN_1000 | resources Envelope Crew [720 h] → Facade Vendor [120 h] |
| EN_1020 | Cladding fabrication and delivery to site | 2026-04-17 → 2026-08-06 (+111d) | 2026-07-02 → 2026-10-22 (+112d) | 138d → 132d | EN_1010 → EN_1000 | resources Envelope Crew [1320 h] → Facade Vendor |
| EN_1100 | Roofing — Halls 1-2 | 2026-10-28 → 2026-09-17 (-41d) | 2026-12-08 → 2026-10-29 (-40d) | 21d → 406d | ST_1400 SS, EN_1020 → EN_1010 | resources Envelope Crew [360 h] → Envelope Crew [180 h] |
| EN_1200 | Wall cladding — Halls 1-2 | 2026-11-02 → 2026-09-17 (-46d) | 2026-12-11 → 2026-10-29 (-43d) | 37d → 61d | EN_1100 SS+5d → EN_1010 | resources Envelope Crew [720 h] → Facade Crew [180 h] |
| EN_1110 | Roofing — Halls 3-4 | 2026-11-02 → 2026-10-22 (-11d) | 2026-12-11 → 2026-12-03 (-8d) | 70d → 356d | ST_1410 SS, EN_1020 → EN_1020 | resources Envelope Crew [360 h] → Envelope Crew [180 h] |
| EN_1210 | Wall cladding — Halls 3-4 | 2026-11-09 → 2026-10-22 (-18d) | 2026-12-18 → 2026-12-03 (-15d) | 79d → 132d | EN_1110 SS+5d → EN_1020 | resources Envelope Crew [720 h] → Facade Crew [180 h] |
| EN_1500 | WEATHERTIGHT — Halls 1-2 | 2026-12-14 → 2026-10-29 (-46d) | 2026-12-14 → 2026-10-29 (-46d) | 43d → 61d |  |  |
| EN_1300 | Louvres, doors and external openings | 2026-12-21 → 2026-12-03 (-18d) | 2027-02-04 → 2027-01-20 (-15d) | 302d → 331d | EN_1210 → EN_1510 | resources Envelope Crew [540 h] → Facade Crew [180 h] |
| EN_1400 | Roof plant screens and walkways | 2027-01-08 → 2026-12-03 (-36d) | 2027-02-11 → 2027-01-13 (-29d) | 291d → 356d | ST_1500 → EN_1110 | resources Envelope Crew [300 h] → Facade Crew [150 h] |
| EN_1510 | WEATHERTIGHT — Halls 3-4 | 2026-12-21 → 2026-12-03 (-18d) | 2026-12-21 → 2026-12-03 (-18d) | 79d → 132d |  |  |
| EN_1600 | Envelope snagging and sealant inspection | 2027-02-12 → 2027-01-20 (-23d) | 2027-03-11 → 2027-02-17 (-22d) | 291d → 331d | EN_1300, EN_1400 → EN_1300 | resources Envelope Crew [360 h] → Envelope Crew [120 h] |
| EN_1900 | Envelope complete | 2027-03-12 → 2027-02-17 (-23d) | 2027-03-12 → 2027-02-17 (-23d) | 293d → 331d |  |  |
| 6.0 | **Mechanical** | 2026-03-18 → 2026-01-15 (-62d) | 2027-10-08 → 2027-09-23 (-15d) |  |  | was named 9 Mechanical Services |
| IL_1200 | Chillers — order and manufacture | 2026-05-19 → 2026-01-15 (-124d) | 2026-11-16 → 2026-07-23 (-116d) | 86d → 476d | VE_1130 → NB_0001 | resources Procurement [1560 h] → Logistics |
| IL_1210 | Chillers — delivery to site | 2026-11-17 → 2026-01-15 (-306d) | 2026-11-25 → 2026-01-26 (-303d) | 86d → 252d | IL_1200 → NB_0001 | resources Procurement [84 h] → Logistics |
| IL_1000 | Instruction to proceed | 2026-03-03 → 2026-04-15 (+43d) | 2026-03-03 → 2026-04-15 (+43d) | -1d → 5d | PROJECT COMMENCEMENT — Commencement Date (2 Mar 2026) → NB_2040 | resources Management & Supervision → Plumbing Crew |
| IL_1010 | Contract award administration and bonds | 2026-03-04 → 2026-04-15 (+42d) | 2026-03-17 → 2026-04-29 (+43d) | 91d → 29d | EN_1000 → IL_1000 | resources Management & Supervision [60 h] → Plumbing Crew [50 h] |
| IL_1020 | Performance security, guarantees and insurances in place | 2026-03-04 → 2026-04-15 (+42d) | 2026-03-17 → 2026-04-29 (+43d) | 163d → 5d | EN_1000 → IL_1000 | resources Management & Supervision [60 h] → Plumbing Crew [50 h] |
| IL_1100 | Design development — chilled water system | 2026-03-18 → 2026-04-29 (+42d) | 2026-04-28 → 2026-06-10 (+43d) | 91d → 29d |  | resources Mechanical Crew [140 h] → MEP Design [112 h] |
| IL_1110 | Design development — heat recovery plant | 2026-03-18 → 2026-04-29 (+42d) | 2026-04-22 → 2026-06-04 (+43d) | 98d → 33d |  | resources Mechanical Crew [288 h] → MEP Design [96 h] |
| IL_1120 | Design development — ventilation and smoke extract | 2026-03-18 → 2026-04-29 (+42d) | 2026-04-20 → 2026-06-02 (+43d) | 100d → 35d |  | resources Mechanical Crew [110 h] → MEP Design [88 h] |
| IL_1125 | Design development — water treatment and adiabatic make-up | 2026-03-18 → 2026-04-29 (+42d) | 2026-04-09 → 2026-05-22 (+43d) | 111d → 42d |  | resources Mechanical Crew [75 h] → MEP Design [60 h] |
| IL_1300 | Site establishment and mechanical setting out | 2026-03-18 → 2026-04-29 (+42d) | 2026-03-31 → 2026-05-15 (+45d) | 163d → 5d | EN_1000, IL_1020 → IL_1000, IL_1020 | resources Mechanical Crew [220 h] → Plumbing Crew [50 h] |
| IL_1311 | Plantroom access — Data Hall 1 | 2026-04-01 → 2026-05-15 (+44d) | 2026-04-01 → 2026-05-15 (+44d) | 163d → 5d |  | resources Mechanical Crew → Plumbing Crew |
| IL_1312 | Plantroom access — Data Hall 2 | 2026-04-01 → 2026-05-15 (+44d) | 2026-04-01 → 2026-05-15 (+44d) | 329d → 180d |  | resources Mechanical Crew → Plumbing Crew |

| ID | Task | Start | Finish | Duration | Total float | Predecessors | Other |
| --- | --- | --- | --- | --- | --- | --- | --- |
| IL_1313 | Plantroom access — Data Hall 3 | 2026-04-01 → 2026-05-15 (+44d) | 2026-04-01 → 2026-05-15 (+44d) |  | 404d → 245d |  | resources Mechanical Crew → Plumbing Crew |
| IL_1314 | Plantroom access — Data Hall 4 | 2026-04-01 → 2026-05-15 (+44d) | 2026-04-01 → 2026-05-15 (+44d) |  | 492d → 308d |  | resources Mechanical Crew → Plumbing Crew |
| IL_1400 | Chilled water pipework — primary spine | 2026-05-21 → 2026-05-19 (-2d) | 2026-09-17 → 2026-08-26 (-22d) |  | 116d → 3d |  | resources Mechanical Crew [1540 h] → Plumbing Crew [350 h] |
| IL_1130 | Contractor and Engineer design review | 2026-05-04 → 2026-06-10 (+37d) | 2026-05-20 → 2026-06-29 (+40d) |  | 589d → 29d | VE_1100, VE_1110, VE_1120 → IL_1100, IL_1110, IL_1120, IL_1125 | resources Procurement [60 h] → MEP Design [48 h] |
| IL_1220 | Dry coolers / adiabatic units — order and manufacture | 2026-05-19 → 2026-06-29 (+41d) | 2026-10-19 → 2026-11-30 (+42d) |  | 90d → 182d | VE_1130 → IL_1130 | resources Procurement [1320 h] → Logistics |
| IL_1240 | CRAH units (28 nr) — order and manufacture | 2026-05-19 → 2026-06-29 (+41d) | 2026-10-19 → 2026-11-30 (+42d) |  | 113d → 29d | VE_1130 → IL_1130 | resources Procurement [1320 h] → Logistics |
| IL_1260 | Waste-heat recovery plant — order and manufacture | 2026-05-19 → 2026-06-29 (+41d) | 2026-12-14 → 2027-01-29 (+46d) |  | 294d → 155d | VE_1130 → IL_1130 | resources Procurement [1800 h] → Logistics |
| IL_1410 | Chilled water pipework — Hall 1 secondary | 2026-06-30 → 2026-07-15 (+15d) | 2026-08-31 → 2026-08-26 (-5d) |  | 143d → 73d | IL_1400 SS+40d → IL_1400 SS+40d, GW_1400 | resources Mechanical Crew [660 h] → Plumbing Crew [150 h] |
| IL_1420 | Chilled water pipework — Hall 2 secondary | 2026-09-18 → 2026-08-26 (-23d) | 2026-10-29 → 2026-10-07 (-22d) |  | 160d → 108d |  | resources Mechanical Crew [660 h] → Plumbing Crew [150 h] |
| IL_1430 | Chilled water pipework — Hall 3 secondary | 2026-09-18 → 2026-08-26 (-23d) | 2026-10-29 → 2026-10-07 (-22d) |  | 235d → 173d |  | resources Mechanical Crew [660 h] → Plumbing Crew [150 h] |
| IL_1440 | Chilled water pipework — Hall 4 secondary | 2026-09-18 → 2026-08-26 (-23d) | 2026-10-29 → 2026-10-07 (-22d) |  | 325d → 236d |  | resources Mechanical Crew [660 h] → Plumbing Crew [150 h] |
| IL_1500 | Pumps, buffer vessels and glycol dosing | 2026-09-01 → 2026-08-26 (-6d) | 2026-10-05 → 2026-09-30 (-5d) |  | 128d → 73d |  | resources Mechanical Crew [550 h] → Plumbing Crew [125 h] |
| IL_1510 | Chiller installation and pipework connection | 2026-11-26 → 2026-08-26 (-92d) | 2026-12-23 → 2026-09-23 (-91d) |  | 88d → 105d |  | resources Mechanical Crew [240 h] → Plumbing Crew [100 h] |
| IL_1600 | Ventilation and smoke extract to ancillary areas | 2026-12-07 → 2026-09-09 (-89d) | 2027-01-28 → 2026-10-28 (-92d) |  | 329d → 272d |  | resources Mechanical Crew [770 h] → Mechanical Crew [210 h] |
| IL_1605 | CHW system flushing — spine and secondary loops | 2026-10-06 → 2026-09-30 (-6d) | 2026-10-21 → 2026-10-16 (-5d) |  | 128d → 73d |  | resources Mechanical Crew [264 h] → Plumbing Crew [60 h] |
| IL_1610 | Water treatment and adiabatic make-up | 2026-10-22 → 2026-10-16 (-6d) | 2026-11-11 → 2026-11-06 (-5d) |  | 130d → 73d |  | resources Mechanical Crew [330 h] → Plumbing Crew [75 h] |
| IL_1230 | Dry coolers — delivery to site | 2026-10-20 → 2026-11-30 (+41d) | 2026-10-28 → 2026-12-09 (+42d) |  | 90d → 182d |  | resources Procurement [84 h] → Logistics |
| IL_1250 | CRAH units — delivery to site | 2026-10-20 → 2026-11-30 (+41d) | 2026-11-02 → 2026-12-14 (+42d) |  | 113d → 29d |  | resources Procurement [120 h] → Logistics |
| IL_1520 | Dry cooler installation — external roof plant | 2027-01-08 → 2026-12-09 (-30d) | 2027-04-05 → 2027-03-09 (-27d) |  | 19d → 182d |  | resources Mechanical Crew [720 h] → Mechanical Crew [360 h] |
| IL_1531 | CRAH installation — Hall 1 (7 nr) | 2026-12-15 → 2026-12-14 (-1d) |  |  | 71d → 29d |  | resources Mechanical Crew [216 h] → Mechanical Crew [108 h] |
| IL_1532 | CRAH installation — Hall 2 (7 nr) | 2026-12-28 → 2026-12-30 (+2d) | 2027-01-22 → 2027-01-27 (+5d) |  | 105d → 50d |  | resources Mechanical Crew [216 h] → Mechanical Crew [108 h] |
| IL_1700 | Static completion and pressure testing — Section 1 | 2027-01-14 → 2027-01-13 (-1d) |  |  | 67d → 29d |  | resources Commissioning Team (MEP) [96 h] → Commissioning Team [64 h] |
| IL_1533 | CRAH installation — Hall 3 (7 nr) | 2027-01-07 → 2027-01-15 (+8d) | 2027-02-01 → 2027-02-10 (+9d) |  | 166d → 105d | IL_1250, IL_1430, IL_1532 SS+10d → IL_1250, IL_1430, IL_1532 SS+10d, EN_1510 | resources Mechanical Crew [216 h] → Mechanical Crew [108 h] |
| IL_1710 | Commissioning L4 — Hall 1 | 2027-01-26 → 2027-01-25 (-1d) |  |  | 69d → 29d |  | resources Commissioning Team (MEP) [96 h] → Commissioning Team [64 h] |
| IL_1701 | Static completion and pressure testing — Section 2 | 2027-01-25 → 2027-01-27 (+2d) | 2027-02-05 → 2027-02-10 (+5d) |  | 102d → 50d |  | resources Commissioning Team (MEP) [120 h] → Commissioning Team [80 h] |
| IL_1270 | Waste-heat recovery plant — delivery | 2026-12-15 → 2027-01-29 (+45d) | 2026-12-23 → 2027-02-09 (+48d) |  | 294d → 155d |  | resources Procurement [84 h] → Logistics |
| IL_1534 | CRAH installation — Hall 4 (7 nr) | 2027-01-18 → 2027-01-29 (+11d) | 2027-02-10 → 2027-02-24 (+14d) |  | 245d → 158d |  | resources Mechanical Crew [216 h] → Mechanical Crew [108 h] |
| IL_1711 | Commissioning L5 — Hall 1 (witnessed) | 2027-02-05 → 2027-02-04 (-1d) |  |  | 69d → 29d |  | resources Commissioning Team (MEP) [60 h] → Commissioning Team [40 h] |
| IL_1540 | Waste-heat recovery plant installation | 2026-12-28 → 2027-02-09 (+43d) | 2027-02-09 → 2027-03-23 (+42d) |  | 290d → 155d |  | resources Mechanical Crew [360 h] → Plumbing Crew [150 h] |
| IL_1702 | Static completion and pressure testing — Section 3 | 2027-02-02 → 2027-02-10 (+8d) | 2027-02-15 → 2027-02-24 (+9d) |  | 188d → 105d |  | resources Commissioning Team (MEP) [120 h] → Commissioning Team [80 h] |
| IL_1712 | Commissioning L4 — Hall 2 | 2027-02-08 → 2027-02-10 (+2d) | 2027-02-26 → 2027-03-03 (+5d) |  | 102d → 50d |  | resources Commissioning Team (MEP) [180 h] → Commissioning Team [120 h] |
| IL_1800 | SECTIONAL COMPLETION 1 — Data Hall 1 mechanical | 2027-02-12 → 2027-02-11 (-1d) | 2027-02-12 → 2027-02-11 (-1d) |  | 69d → 29d |  | resources Commissioning Team (MEP) → Plumbing Crew |
| IL_1703 | Static completion and pressure testing — Section 4 | 2027-02-11 → 2027-02-24 (+13d) | 2027-02-24 → 2027-03-10 (+14d) |  | 245d → 158d |  | resources Commissioning Team (MEP) [120 h] → Commissioning Team [80 h] |
| IL_1714 | Commissioning L4 — Hall 3 | 2027-02-16 → 2027-02-24 (+8d) | 2027-03-08 → 2027-03-17 (+9d) |  | 188d → 105d |  | resources Commissioning Team (MEP) [180 h] → Commissioning Team [120 h] |
| IL_1713 | Commissioning L5 — Hall 2 (witnessed) | 2027-03-01 → 2027-03-03 (+2d) | 2027-03-10 → 2027-03-15 (+5d) |  | 102d → 50d |  | resources Commissioning Team (MEP) [96 h] → Commissioning Team [64 h] |
| IL_1716 | Commissioning L4 — Hall 4 | 2027-02-25 → 2027-03-10 (+13d) | 2027-03-17 → 2027-04-02 (+16d) |  | 245d → 158d |  | resources Commissioning Team (MEP) [180 h] → Commissioning Team [120 h] |
| IL_1810 | SECTIONAL COMPLETION 2 — Data Hall 2 mechanical | 2027-03-11 → 2027-03-15 (+4d) | 2027-03-11 → 2027-03-15 (+4d) |  | 104d → 50d |  | resources Commissioning Team (MEP) → Plumbing Crew |
| IL_1715 | Commissioning L5 — Hall 3 (witnessed) | 2027-03-09 → 2027-03-17 (+8d) | 2027-03-18 → 2027-03-31 (+13d) |  | 188d → 105d |  | resources Commissioning Team (MEP) [96 h] → Commissioning Team [64 h] |
| IL_1820 | SECTIONAL COMPLETION 3 — Data Hall 3 mechanical | 2027-03-19 → 2027-03-31 (+12d) | 2027-03-19 → 2027-03-31 (+12d) |  | 188d → 105d |  | resources Commissioning Team (MEP) → Plumbing Crew |
| IL_1717 | Commissioning L5 — Hall 4 (witnessed) | 2027-03-18 → 2027-04-02 (+15d) | 2027-03-31 → 2027-04-14 (+14d) |  | 245d → 158d |  | resources Commissioning Team (MEP) [96 h] → Commissioning Team [64 h] |
| IL_1720 | O&M manuals and as-built records | 2027-04-01 → 2027-04-14 (+13d) | 2027-04-16 → 2027-04-30 (+14d) |  | 243d → 273d |  | resources Commissioning Team (MEP) [144 h] → Plumbing Crew [60 h] |
| IL_1730 | Warranties, spare parts and maintenance training handover | 2027-04-19 → 2027-04-30 (+11d) | 2027-04-28 → 2027-05-13 (+15d) |  | 242d → 273d |  | resources Commissioning Team (MEP) [96 h] → Plumbing Crew [40 h] |
| IL_1550 | Waste-heat connection to boundary chamber | 2027-02-10 → 2027-08-31 (+202d) | 2027-02-25 → 2027-09-16 (+203d) |  | 288d → 44d | IL_1540 → IL_1540, NB_7005 | resources Mechanical Crew [264 h] → Plumbing Crew [60 h] |
| IL_1560 | Waste-heat 72-hour witnessed delivery test (4 MW at 70 C) | 2027-10-04 → 2027-09-16 (-18d) | 2027-10-08 → 2027-09-23 (-15d) |  | 71d → 44d | IL_1550, District-heating network available at boundary (offtaker), Heating season open — waste-heat witnessed-test window → IL_1550 | resources Commissioning Team (MEP) [60 h] → Logistics |
| IL_1740 | Subcontract works complete | 2027-09-01 → 2027-09-23 (+22d) | 2027-09-01 → 2027-09-23 (+22d) |  | 120d → 179d | VE_1950, VE_1951, VE_1952, VE_1953, VE_1960 → IL_1800, IL_1810, IL_1820, IL_1830, IL_1730 | resources Commissioning Team (MEP) → Plumbing Crew |
| IL_1830 | SECTIONAL COMPLETION 4 — Data Hall 4 mechanical | 2027-10-11 → 2027-09-23 (-18d) | 2027-10-11 → 2027-09-23 (-18d) |  | 71d → 44d |  | resources Commissioning Team (MEP) → Plumbing Crew |
| VE_1200 | 110/20 kV transformers (2 nr) — order and manufacture | 2026-01-19 → 2026-01-15 (-4d) | 2027-01-01 → 2027-01-27 (+26d) | 250d → 260d | -4d → 747d | Advance purchase instruction — long-lead electrical plant → NB_0001 | resources Procurement → MEP Design |
| VE_1220 | 20 kV ring main switchgear — order and manufacture | 2026-05-01 → 2026-01-15 (-106d) | 2027-01-21 → 2026-10-15 (-98d) |  | -1d → 379d | VE_1100 → NB_0001 | resources Procurement → Logistics |
| VE_1240 | Standby generators (8 nr) — order and manufacture | 2026-03-18 → 2026-01-15 (-62d) | 2026-12-22 → 2026-10-29 (-54d) |  | 19d → -15d | VE_1010 → NB_0001 | resources Procurement → Logistics |
| VE_1000 | Instruction to proceed | 2026-03-03 → 2026-04-15 (+43d) | 2026-03-03 → 2026-04-15 (+43d) |  | 609d → 11d | PROJECT COMMENCEMENT — Commencement Date (2 Mar 2026) → NB_2050 | resources Design Office → Electrical Crew |
| VE_1010 | Contract award administration, bonds and securities | 2026-03-04 → 2026-04-15 (+42d) | 2026-03-17 → 2026-04-29 (+43d) |  | -1d → 11d | IL_1000 → VE_1000 | resources Management & Supervision [60 h] → Electrical Crew [60 h] |
| VE_1100 | Design development — HV/MV distribution | 2026-03-18 → 2026-04-29 (+42d) | 2026-04-30 → 2026-06-12 (+43d) |  | -1d → 492d |  | resources Procurement [150 h] → MEP Design [120 h] |
| VE_1110 | Design development — LV, busway and containment | 2026-03-18 → 2026-04-29 (+42d) | 2026-04-23 → 2026-06-05 (+43d) |  | 126d → 31d |  | resources Procurement [500 h] → MEP Design [100 h] |
| VE_1120 | Design development — generators, UPS and battery systems | 2026-03-18 → 2026-04-29 (+42d) | 2026-04-23 → 2026-06-05 (+43d) |  | 600d → 497d |  | resources Procurement [125 h] → MEP Design [100 h] |
| VE_1260 | UPS modules (16 nr) — order and manufacture | 2026-03-18 → 2026-04-29 (+42d) | 2026-10-13 → 2026-11-30 (+48d) |  | 93d → 11d |  | resources Procurement → Logistics |
| VE_1280 | Battery systems — order and manufacture | 2026-03-18 → 2026-04-29 (+42d) | 2026-09-01 → 2026-10-19 (+48d) |  | 139d → 43d |  | resources Procurement → Logistics |
| VE_1400 | Site establishment and electrical setting out | 2026-03-18 → 2026-04-29 (+42d) | 2026-03-31 → 2026-05-15 (+45d) |  | 195d → 103d |  | resources Management & Supervision [60 h] → Electrical Crew [60 h] |
| VE_1500 | 110 kV termination, metering and protection to DNO interface | 2026-04-01 → 2026-05-15 (+44d) | 2026-06-08 → 2026-07-20 (+42d) |  | 219d → 103d |  | resources Electrical Crew [990 h] → Electrical Crew [270 h] |
| VE_1600 | Hall substation 20/0.4 kV — Hall 1 | 2026-04-01 → 2026-05-15 (+44d) | 2026-05-08 → 2026-06-22 (+45d) |  | 257d → 128d |  | resources Electrical Crew [550 h] → Electrical Crew [150 h] |
| VE_1620 | Containment and small power — shared MEP spine | 2026-04-01 → 2026-05-15 (+44d) | 2026-06-01 → 2026-07-13 (+42d) |  | 195d → 484d |  | resources Electrical Crew [800 h] → Electrical Crew [240 h] |
| VE_1300 | Overhead busway — order and manufacture | 2026-04-24 → 2026-06-05 (+42d) | 2026-09-10 → 2026-10-26 (+46d) |  | 124d → 31d |  | resources Procurement → Logistics |
| VE_1601 | Hall substation 20/0.4 kV — Hall 2 | 2026-04-16 → 2026-06-05 (+50d) | 2026-05-22 → 2026-07-13 (+52d) |  | 302d → 156d |  | resources Electrical Crew [550 h] → Electrical Crew [150 h] |
| VE_1130 | Contractor and Engineer design review | 2026-04-29 → 2026-06-12 (+44d) | 2026-05-18 → 2026-07-01 (+44d) |  | 90d → 492d | IL_1100, IL_1110, IL_1120, IL_1125 → VE_1100, VE_1110, VE_1120 | resources Mechanical Crew [60 h] → MEP Design [48 h] |
| VE_1602 | Hall substation 20/0.4 kV — Hall 3 | 2026-05-04 → 2026-06-29 (+56d) | 2026-06-08 → 2026-08-03 (+56d) |  | 358d → 206d |  | resources Electrical Crew [550 h] → Electrical Crew [150 h] |
| VE_1603 | Hall substation 20/0.4 kV — Hall 4 | 2026-05-19 → 2026-07-20 (+62d) | 2026-06-23 → 2026-08-24 (+62d) |  | 444d → 254d |  | resources Electrical Crew [550 h] → Electrical Crew [150 h] |
| VE_1230 | Switchgear — delivery to site | 2027-01-22 → 2026-10-15 (-99d) | 2027-02-01 → 2026-10-26 (-98d) |  | -1d → 379d |  | resources Procurement → Logistics |
| VE_1290 | Battery systems — delivery to site | 2026-09-02 → 2026-10-19 (+47d) | 2026-09-08 → 2026-10-26 (+48d) |  | 139d → 43d |  | resources Procurement → Logistics |
| VE_1310 | Busway — delivery to site | 2026-09-11 → 2026-10-26 (+45d) | 2026-09-21 → 2026-11-04 (+44d) |  | 124d → 31d |  | resources Procurement → Logistics |
| VE_1520 | 20 kV ring main switchboard installation | 2027-02-02 → 2026-10-26 (-99d) | 2027-03-15 → 2026-12-07 (-98d) |  | -1d → 379d |  | resources Electrical Crew [660 h] → Electrical Crew [180 h] |
| VE_1250 | Generators — delivery to site | 2026-12-23 → 2026-10-29 (-55d) | 2027-01-05 → 2026-11-12 (-54d) |  | 19d → -15d |  | resources Procurement → Logistics |

| ID | Task | Start | Finish | Total float | Predecessors | Other |
| --- | --- | --- | --- | --- | --- | --- |
| VE_1610 | Overhead busway and containment — Hall 1 | 2026-09-22 → 2026-11-04 (+43d) | 2026-11-02 → 2026-12-16 (+44d) | 122d → 31d |  | resources Electrical Crew [600 h] → Electrical Crew [180 h] |
| VE_1611 | Overhead busway and containment — Hall 2 | 2026-09-22 → 2026-11-04 (+43d) | 2026-11-02 → 2026-12-16 (+44d) | 178d → 74d |  | resources Electrical Crew [600 h] → Electrical Crew [180 h] |
| VE_1612 | Overhead busway and containment — Hall 3 | 2026-09-22 → 2026-11-04 (+43d) | 2026-11-02 → 2026-12-16 (+44d) | 253d → 139d |  | resources Electrical Crew [600 h] → Electrical Crew [180 h] |
| VE_1613 | Overhead busway and containment — Hall 4 | 2026-09-22 → 2026-11-04 (+43d) | 2026-11-02 → 2026-12-16 (+44d) | 353d → 202d |  | resources Electrical Crew [600 h] → Electrical Crew [180 h] |
| VE_1530 | Standby generator installation (8 nr) and paralleling | 2027-01-07 → 2026-11-12 (-56d) | 2027-03-24 → 2027-02-03 (-49d) | 18d → -15d |  | resources Electrical Crew [1210 h] → Electrical Crew [330 h] |
| VE_1270 | UPS — delivery to site | 2026-10-14 → 2026-11-30 (+47d) | 2026-10-22 → 2026-12-09 (+48d) | 93d → 11d |  | resources Procurement → Logistics |
| VE_1550 | UPS and battery system installation | 2026-10-23 → 2026-12-09 (+47d) | 2026-12-17 → 2027-02-09 (+54d) | 95d → 11d |  | resources Electrical Crew [880 h] → Electrical Crew [240 h] |
| VE_1210 | Transformers — delivery to site | 2027-01-04 → 2027-01-27 (+23d) | 2027-01-15 → 2027-02-10 (+26d) | -4d → -40d |  | resources Procurement → Logistics |
| VE_1540 | Fuel storage, bunding and 48-hour fuel system | 2027-01-27 → 2027-02-03 (+7d) | 2027-03-09 → 2027-03-17 (+8d) | 42d → 176d | VE_1530 SS+20d → VE_1530 | resources Electrical Crew [660 h] → Electrical Crew [180 h] |
| VE_1510 | Transformer installation and HV terminations | 2027-01-18 → 2027-02-10 (+23d) | 2027-03-05 → 2027-04-02 (+28d) | -4d → -40d |  | resources Electrical Crew [770 h] → Electrical Crew [210 h] |
| VE_1700 | Earthing, bonding, lightning protection and metering | 2027-03-08 → 2027-04-02 (+25d) | 2027-05-19 → 2027-06-14 (+26d) | 217d → 116d |  | resources Electrical Crew [1100 h] → Electrical Crew [300 h] |
| VE_1800 | Hall 1 substation energisation and LV distribution live | 2027-03-12 → 2027-04-02 (+21d) | 2027-04-05 → 2027-04-23 (+18d) | -7d → -40d | VE_1600, VE_1610, VE_1510, 110 kV GRID ENERGISATION (Vantaan Energia) — earliest availability SS → VE_1600, VE_1610, VE_1510, NB_7001 | resources Electrical Crew [330 h] → Electrical Crew [90 h] |
| VE_1900 | Commissioning L4 and L5 — Hall 1 (witnessed) | 2027-03-22 → 2027-04-23 (+32d) | 2027-04-20 → 2027-05-24 (+34d) | 1d → -40d | VE_1800 SS+8d, VE_1550, Load-bank hire, fuel & commissioning power arrangement SS → VE_1800, VE_1530 SS+30d, VE_1550 | resources Commissioning Team (MEP) [240 h] → Commissioning Team [160 h] |
| VE_1950 | SECTIONAL COMPLETION 1 — Data Hall 1 electrical | 2027-04-21 → 2027-05-24 (+33d) | 2027-04-21 → 2027-05-24 (+33d) | 1d → -40d |  | resources Commissioning Team (MEP) → Electrical Crew |
| VE_1801 | Hall 2 substation energisation and LV distribution live | 2027-04-06 → 2027-06-30 (+85d) | 2027-04-26 → 2027-07-21 (+86d) | 28d → -58d | VE_1601, VE_1611, VE_1800 → VE_1601, VE_1611, VE_1800, NB_7002 | resources Electrical Crew [330 h] → Electrical Crew [90 h] |
| VE_1901 | Commissioning L4 and L5 — Hall 2 (witnessed) | 2027-04-27 → 2027-07-21 (+85d) | 2027-05-25 → 2027-08-18 (+85d) | 29d → -58d |  | resources Commissioning Team (MEP) [240 h] → Commissioning Team [160 h] |
| VE_1951 | SECTIONAL COMPLETION 2 — Data Hall 2 electrical | 2027-05-26 → 2027-08-18 (+84d) | 2027-05-26 → 2027-08-18 (+84d) | 28d → -58d |  | resources Commissioning Team (MEP) → Electrical Crew |
| VE_1802 | Hall 3 substation energisation and LV distribution live | 2027-04-27 → 2027-11-01 (+188d) | 2027-05-18 → 2027-11-22 (+188d) | 100d → -81d | VE_1602, VE_1612, VE_1801 → VE_1602, VE_1612, VE_1801, NB_7003 | resources Electrical Crew [330 h] → Electrical Crew [90 h] |
| VE_1902 | Commissioning L4 and L5 — Hall 3 (witnessed) | 2027-05-27 → 2027-11-22 (+179d) | 2027-06-23 → 2027-12-21 (+181d) | 91d → -81d |  | resources Commissioning Team (MEP) [240 h] → Commissioning Team [160 h] |
| VE_1952 | SECTIONAL COMPLETION 3 — Data Hall 3 electrical | 2027-06-24 → 2027-12-21 (+180d) | 2027-06-24 → 2027-12-21 (+180d) | 91d → -81d |  | resources Commissioning Team (MEP) → Electrical Crew |
| VE_1803 | Hall 4 substation energisation and LV distribution live | 2027-05-19 → 2028-01-31 (+257d) | 2027-06-08 → 2028-02-21 (+258d) | 156d → -80d | VE_1603, VE_1613, VE_1802 → VE_1603, VE_1613, VE_1802, NB_7004 | resources Electrical Crew [330 h] → Electrical Crew [90 h] |
| VE_1903 | Commissioning L4 and L5 — Hall 4 (witnessed) | 2027-06-28 → 2028-02-21 (+238d) | 2027-08-13 → 2028-03-20 (+220d) | 137d → -80d |  | resources Commissioning Team (MEP) [240 h] → Commissioning Team [160 h] |
| VE_1953 | SECTIONAL COMPLETION 4 — Data Hall 4 electrical | 2027-08-16 → 2028-03-20 (+217d) | 2027-08-16 → 2028-03-20 (+217d) | 127d → -80d |  | resources Commissioning Team (MEP) → Electrical Crew |
| VE_1960 | O&M manuals, as-builts and warranties | 2027-08-16 → 2028-03-20 (+217d) | 2027-08-31 → 2028-04-05 (+218d) | 119d → 43d |  | resources Commissioning Team (MEP) [144 h] → Electrical Crew [72 h] |
| VE_1970 | Subcontract works complete | 2027-10-12 → 2028-04-05 (+176d) | 2027-10-12 → 2028-04-05 (+176d) | 79d → 43d | IL_1800, IL_1810, IL_1820, IL_1830, IL_1730 → VE_1950, VE_1951, VE_1952, VE_1953, VE_1960 | resources Commissioning Team (MEP) → Electrical Crew |
| EL_1000 | Instruction to proceed | 2026-03-03 → 2026-07-30 (+149d) | 2026-03-03 → 2026-07-30 (+149d) | 1d → 10d | PROJECT COMMENCEMENT — Commencement Date (2 Mar 2026) → NB_2060 | resources Procurement → ICT Crew |
| EL_1010 | Design development — BMS/DCIM, fire detection and suppression | 2026-03-04 → 2026-07-30 (+148d) | 2026-04-30 → 2026-09-24 (+147d) | 609d → 10d | VE_1000 → EL_1000 | resources Design Office [200 h] → MEP Design [120 h] |
| EL_1100 | Containment and cable pulling — Halls 1-2 | 2026-11-25 → 2026-09-24 (-62d) | 2027-01-11 → 2026-11-05 (-67d) | 13d → 10d | ST_1400, VE_1620 → EL_1010 | resources ELV Crew [600 h] → ICT Crew [120 h] |
| EL_1110 | Containment and cable pulling — Halls 3-4 | 2026-12-07 → 2026-09-24 (-74d) | 2027-01-21 → 2026-11-05 (-77d) | 276d → 38d | EL_1100 SS+10d, ST_1410 → EL_1010 | resources ELV Crew [600 h] → ICT Crew [120 h] |
| EL_1200 | Fire detection installation — Halls 1-2 | 2026-12-07 → 2026-11-05 (-32d) | 2027-01-14 → 2026-12-10 (-35d) | 29d → 10d | EL_1100 SS+10d → EL_1100 | resources ELV Crew [300 h] → Fire Protection Crew [100 h] |
| EL_1210 | Fire detection installation — Halls 3-4 | 2027-01-22 → 2026-11-05 (-78d) | 2027-02-25 → 2026-12-10 (-77d) | 272d → 38d |  | resources ELV Crew [300 h] → Fire Protection Crew [100 h] |
| EL_1400 | BMS/DCIM head-end and field devices | 2026-12-07 → 2026-11-05 (-32d) | 2027-02-04 → 2027-01-05 (-30d) | 28d → 331d | EL_1100 SS+10d → EL_1110 | resources ELV Crew [480 h] → BMS Crew [120 h] |
| EL_1300 | Gas suppression installation — Halls 1-2 | 2026-12-17 → 2026-12-10 (-7d) | 2027-01-26 → 2027-01-20 (-6d) | 40d → 10d | EL_1200 SS+10d → EL_1200 | resources ELV Crew [300 h] → Fire Protection Crew |
| EL_1310 | Gas suppression installation — Halls 3-4 | 2027-02-26 → 2026-12-10 (-78d) | 2027-04-05 → 2027-01-20 (-75d) | 272d → 38d |  | resources ELV Crew [300 h] → Fire Protection Crew [100 h] |
| EL_1500 | Security, access control and CCTV — internal | 2027-01-27 → 2027-01-05 (-22d) | 2027-03-09 → 2027-02-17 (-20d) | 229d → 331d | EL_1300 → EL_1400 | resources ELV Crew [360 h] → ICT Crew [120 h] |
| EL_1600 | L3 point-to-point testing — Section 1 | 2027-02-05 → 2027-01-20 (-16d) | 2027-03-04 → 2027-02-17 (-15d) | 25d → 10d | EL_1200, EL_1300, EL_1400 → EL_1300 | resources Commissioning Team (MEP) [240 h] → Commissioning Team [120 h] |
| EL_1610 | L3 point-to-point testing — Sections 2-4 | 2027-03-05 → 2027-01-20 (-44d) | 2027-04-12 → 2027-02-24 (-47d) | 39d → 38d | EL_1600 → EL_1310 | resources Commissioning Team (MEP) [300 h] → Commissioning Team [150 h] |
| EL_1700 | L4 integrated systems testing support — Section 1 | 2027-03-05 → 2027-02-17 (-16d) | 2027-03-25 → 2027-03-10 (-15d) | 27d → 10d |  | resources Commissioning Team (MEP) [180 h] → Commissioning Team [90 h] |
| EL_1710 | L4 integrated systems testing support — Sections 2-4 | 2027-04-13 → 2027-02-24 (-48d) | 2027-05-18 → 2027-04-02 (-46d) | 36d → 38d |  | resources Commissioning Team (MEP) [300 h] → Commissioning Team [150 h] |
| EL_1900 | ELV complete — Section 1 | 2027-03-30 → 2027-03-10 (-20d) | 2027-03-30 → 2027-03-10 (-20d) | 23d → 10d |  | resources ELV Crew → ICT Crew |
| EL_1910 | ELV complete — Sections 2-4 | 2027-05-19 → 2027-04-02 (-47d) | 2027-05-19 → 2027-04-02 (-47d) | 35d → 38d |  | resources ELV Crew → ICT Crew |
| FI_1000 | Instruction to proceed | 2026-03-03 → 2026-08-06 (+156d) | 2026-03-03 → 2026-08-06 (+156d) | 140d → 43d | PROJECT COMMENCEMENT — Commencement Date (2 Mar 2026) → NB_2030 | resources Envelope Crew → Fit-Out Crew |
| FI_1010 | Design development — white-space containment and finishes | 2026-03-04 → 2026-08-06 (+155d) | 2026-04-16 → 2026-09-17 (+154d) | 623d → 43d | EX_1000 → FI_1000 | resources Fit-out Crew [600 h] → Interior Design [90 h] |
| FI_1110 | Internal blockwork and partitions — Halls 3-4 | 2026-12-22 → 2026-09-17 (-96d) | 2027-02-05 → 2026-10-29 (-99d) | 79d → 43d | EN_1510 → FI_1010 | resources Fit-out Crew [600 h] → Fit-Out Crew [300 h] |
| FI_1200 | Raised access floor — Hall 1 | 2027-01-11 → 2026-09-17 (-116d) | 2027-02-05 → 2026-10-15 (-113d) | 37d → 76d | Internal blockwork and partitions — Hall 1 → FI_1010 | resources Fit-out Crew [400 h] → Fit-Out Crew [200 h] |
| FI_1220 | Raised access floor — Hall 3 | 2027-02-08 → 2026-09-17 (-144d) | 2027-03-05 → 2026-10-15 (-141d) | 77d → 396d | FI_1110 → FI_1010 | resources Fit-out Crew [400 h] → Fit-Out Crew [200 h] |
| FI_1210 | Raised access floor — Hall 2 | 2027-02-01 → 2026-10-15 (-109d) | 2027-02-26 → 2026-11-12 (-106d) | 79d → 76d | Internal blockwork and partitions — Hall 2 → FI_1200 | resources Fit-out Crew [400 h] → Fit-Out Crew [200 h] |
| FI_1230 | Raised access floor — Hall 4 | 2027-03-08 → 2026-10-15 (-144d) | 2027-04-06 → 2026-11-12 (-145d) | 78d → 396d |  | resources Fit-out Crew [400 h] → Fit-Out Crew [200 h] |
| FI_1400 | Administration and NOC block fit-out | 2026-12-15 → 2026-10-29 (-47d) | 2027-02-12 → 2026-12-28 (-46d) | 322d → 366d | EN_1500 → FI_1110 | resources Fit-out Crew [800 h] → Fit-Out Crew [400 h] |
| FI_1310 | Hot/cold aisle containment — Halls 3-4 | 2027-04-07 → 2026-11-12 (-146d) | 2027-05-12 → 2026-12-17 (-146d) |  | FI_1220, FI_1230 → FI_1210 | resources Fit-out Crew [500 h] → Fit-Out Crew [250 h] |
| FI_1510 | Painting, sealing and final finishes — Halls 3-4 | 2027-05-13 → 2026-12-17 (-147d) | 2027-06-09 → 2027-01-20 (-140d) | 97d → 76d |  | resources Fit-out Crew [400 h] → Fit-Out Crew [200 h] |
| FI_1610 | White-space cleaning to data-centre standard — Halls 3-4 | 2027-06-10 → 2027-01-20 (-141d) | 2027-06-28 → 2027-02-05 (-143d) | 97d → 76d |  | resources Fit-out Crew [240 h] → Fit-Out Crew [120 h] |
| FI_1900 | Finishes complete — Section 1 | 2027-03-22 → 2027-01-22 (-59d) | 2027-03-22 → 2027-01-22 (-59d) | 283d → 43d | White-space cleaning (data-centre standard) — Hall 1 → FI_1600 | resources Fit-out Crew → Fit-Out Crew |
| FI_1910 | Finishes complete — Sections 3-4 | 2027-06-29 → 2027-02-05 (-144d) | 2027-06-29 → 2027-02-05 (-144d) | 184d → 141d |  | resources Fit-out Crew → Fit-Out Crew |
| EX_1000 | Instruction to proceed | 2026-03-03 → 2026-03-16 (+13d) | 2026-03-03 → 2026-03-16 (+13d) | 623d → 349d | PROJECT COMMENCEMENT — Commencement Date (2 Mar 2026) → NB_2070 | resources Fit-out Crew → Civil Crew |
| EX_1010 | Temporary site fencing and gate installation | 2026-03-04 → 2026-03-16 (+12d) | 2026-03-17 → 2026-03-30 (+13d) | 335d → 349d | ST_1000 → EX_1000, NB_0002 | resources Management & Supervision [60 h] → Civil Crew [50 h] |
| EX_1100 | Fibre entry — route A ducting and chambers | 2026-03-18 → 2026-03-30 (+12d) | 2026-04-30 → 2026-05-15 (+15d) | 335d → 349d |  | resources External Works Crew [480 h] → Civil Crew [150 h] |
| EX_1110 | Fibre entry — route B ducting and chambers | 2026-05-04 → 2026-05-15 (+11d) | 2026-06-15 → 2026-06-29 (+14d) | 332d → 349d |  | resources External Works Crew [480 h] → Civil Crew [150 h] |
| EX_1200 | Permanent site roads and hardstanding — phase 1 | 2027-02-19 → 2026-06-29 (-235d) | 2027-04-12 → 2026-08-17 (-238d) | 84d → 349d | EX_1110, ST_1600, GW_1900 → EX_1110 | resources External Works Crew [560 h] → Civil Crew |
| EX_1300 | Perimeter security fence and gates | 2027-04-13 → 2026-08-17 (-239d) | 2027-05-25 → 2026-09-28 (-239d) | 83d → 349d |  | resources External Works Crew [480 h] → Civil Crew [150 h] |
| EX_1400 | External lighting and CCTV columns | 2027-05-26 → 2026-09-28 (-240d) | 2027-06-30 → 2026-11-02 (-240d) | 103d → 349d |  | resources External Works Crew [400 h] → Civil Crew [125 h] |
| EX_1500 | Car parking, footpaths and hardstanding — permanent | 2027-07-01 → 2026-11-02 (-241d) | 2027-09-01 → 2026-12-14 (-261d) | 102d → 349d |  | resources External Works Crew [480 h] → Civil Crew [150 h] |
| EX_1700 | Gatehouse and weighbridge commissioning | 2027-07-01 → 2026-11-02 (-241d) | 2027-08-18 → 2026-11-30 (-261d) | 116d → 384d | EX_1400, EL_1500 → EX_1400 | resources Commissioning Team (MEP) [240 h] → Civil Crew [100 h] |
| EX_1600 | Landscaping and reinstatement | 2027-09-02 → 2026-12-14 (-262d) | 2027-10-06 → 2027-01-22 (-257d) | 81d → 349d | EX_1500, EX_1700 → EX_1500 | resources External Works Crew [400 h] → Landscaping Crew [100 h] |
| EX_1900 | External works complete | 2027-10-07 → 2027-01-22 (-258d) | 2027-10-07 → 2027-01-22 (-258d) | 83d → 349d |  | resources External Works Crew → Civil Crew |
